# 15-Story Residential Tower

How a schedule from Primavera P6 changed from version to version. A marks actual dates.

## Version 1 (data date 2026-01-31, saved 2026-11-01, file RES-TWR-BL01.xer)

Note of the change: Publish Residential Tower schedule recovery case study

| ID | WBS | Task | Duration | Start | Finish | Predecessors | Total float |
| --- | --- | --- | --- | --- | --- | --- | --- |
|  | 01 | **Project Milestones & Controls** |  | 2027-01-05 | 2028-05-13 |  |  |
| M-START |  | Project Commencement | 0d | 2027-01-05 | 2027-01-05 |  | 0d |
| M-STRUCT |  | Structure Complete | 0d | 2028-01-01 | 2028-01-01 | RF-020 | 27d |
| M-ENVELOPE |  | Building Envelope Complete | 0d | 2028-01-22 | 2028-01-22 | ENV-01-030, ENV-02-030, ENV-03-030, ENV-04-030, ENV-05-030, RF-040 | 21d |
| M-HANDOVER |  | Practical Completion / Handover | 0d | 2028-05-13 | 2028-05-13 | TST-050 | 0d |
|  | 02 | **Preconstruction & Mobilization** |  | 2027-01-05 | 2027-05-12 |  |  |
| PRE-010 |  | Construction drawings / design coordination | 20d | 2027-01-05 | 2027-01-27 | M-START | 183d |
| PRE-020 |  | Permits and authority mobilization approvals | 25d | 2027-01-05 | 2027-02-02 | M-START | 0d |
| PRE-030 |  | Site mobilization and temporary facilities | 10d | 2027-01-05 | 2027-01-15 | M-START | 11d |
| PRE-040 |  | Survey control and site setting out | 4d | 2027-01-16 | 2027-01-20 | PRE-030 | 11d |
| PRE-050 |  | HSE, QA/QC and method statement approvals | 8d | 2027-01-16 | 2027-01-25 | PRE-030 | 13d |
| PRE-060 |  | Long-lead equipment submittals and procurement | 90d | 2027-01-28 | 2027-05-12 | PRE-010 | 183d |
| PRE-070 |  | Facade system shop drawings and procurement | 75d | 2027-01-28 | 2027-04-24 | PRE-010 | 203d |
|  | 03 | **Enabling, Excavation & Substructure** |  | 2027-02-03 | 2027-08-23 |  |  |
|  | 01 | **Earthworks & Retention** |  | 2027-02-03 | 2027-04-08 |  |  |
| EXC-010 |  | Site clearing and utility investigation | 6d | 2027-02-03 | 2027-02-09 | PRE-040, PRE-020 | 0d |
| EXC-020 |  | Excavation support / shoring installation | 20d | 2027-02-10 | 2027-03-04 | EXC-010, PRE-050 | 0d |
| EXC-030 |  | Excavation to basement 1 | 12d | 2027-03-05 | 2027-03-18 | EXC-020 | 0d |
| EXC-040 |  | Excavation to basement 2 and dewatering | 15d | 2027-03-19 | 2027-04-05 | EXC-030 | 0d |
| EXC-050 |  | Formation inspection and soil acceptance | 3d | 2027-04-06 | 2027-04-08 | EXC-040 | 0d |
|  | 02 | **Foundations & Basements** |  | 2027-04-09 | 2027-08-23 |  |  |
| SUB-010 |  | Blinding concrete and foundation layout | 5d | 2027-04-09 | 2027-04-14 | EXC-050 | 0d |
| SUB-020 |  | Raft reinforcement, embeds and formwork | 18d | 2027-04-15 | 2027-05-05 | SUB-010 | 0d |
| SUB-030 |  | Raft pre-pour inspection | 2d | 2027-05-06 | 2027-05-07 | SUB-020 | 0d |
| SUB-040 |  | Raft concrete pour and curing / strength release | 10d | 2027-05-08 | 2027-05-19 | SUB-030 | 0d |
| B2-010 |  | Basement 2 columns and walls | 9d | 2027-05-20 | 2027-05-29 | SUB-040 | 0d |
| B2-020 |  | Basement 2 slab formwork and reinforcement | 10d | 2027-05-31 | 2027-06-10 | B2-010 | 0d |
| B2-030 |  | Basement 2 MEP sleeves and pre-pour inspection | 3d | 2027-06-11 | 2027-06-14 | B2-020 | 0d |
| B2-040 |  | Basement 2 slab pour and strength release | 7d | 2027-06-15 | 2027-06-22 | B2-030 | 0d |
| B1-010 |  | Basement 1 columns and walls | 9d | 2027-06-23 | 2027-07-02 | B2-040 | 0d |
| B1-020 |  | Basement 1 slab formwork and reinforcement | 10d | 2027-07-03 | 2027-07-14 | B1-010 | 0d |
| B1-030 |  | Basement 1 MEP sleeves and pre-pour inspection | 3d | 2027-07-15 | 2027-07-17 | B1-020 | 0d |
| B1-040 |  | Basement 1 slab pour and strength release | 7d | 2027-07-19 | 2027-07-26 | B1-030 | 0d |
| SUB-090 |  | Basement external waterproofing and protection | 14d | 2027-07-27 | 2027-08-11 | B1-040 | 157d |
| SUB-100 |  | Basement backfill and compaction | 10d | 2027-08-12 | 2027-08-23 | SUB-090 | 157d |
|  | 04 | **Superstructure** |  | 2027-07-27 | 2028-01-01 |  |  |
|  | 01 | **Ground Floor** |  | 2027-07-27 | 2027-08-17 |  |  |
| GF-010 |  | Ground floor columns and core walls | 6d | 2027-07-27 | 2027-08-02 | B1-040 | 0d |
| GF-020 |  | Ground floor slab formwork and reinforcement | 6d | 2027-08-03 | 2027-08-09 | GF-010 | 0d |
| GF-030 |  | Ground floor embedded services / inspection | 2d | 2027-08-10 | 2027-08-11 | GF-020 | 0d |
| GF-040 |  | Ground floor concrete pour and release | 5d | 2027-08-12 | 2027-08-17 | GF-030 | 0d |
|  | 02 | **Residential Floors** |  | 2027-08-18 | 2027-12-17 |  |  |
|  | 01 | **Level 01 - Structure** |  | 2027-08-18 | 2027-08-25 |  |  |
| S01-010 |  | L01 vertical elements / core | 2d | 2027-08-18 | 2027-08-19 | GF-040 | 0d |
| S01-020 |  | L01 slab formwork and reinforcement | 2d | 2027-08-20 | 2027-08-21 | S01-010 | 0d |
| S01-030 |  | L01 MEP embeds and pre-pour inspection | 1d | 2027-08-23 | 2027-08-23 | S01-020 | 0d |
| S01-040 |  | L01 slab concrete and workface release | 2d | 2027-08-24 | 2027-08-25 | S01-030 | 0d |
|  | 02 | **Level 02 - Structure** |  | 2027-08-26 | 2027-09-02 |  |  |
| S02-010 |  | L02 vertical elements / core | 2d | 2027-08-26 | 2027-08-27 | S01-040 | 0d |
| S02-020 |  | L02 slab formwork and reinforcement | 2d | 2027-08-28 | 2027-08-30 | S02-010 | 0d |
| S02-030 |  | L02 MEP embeds and pre-pour inspection | 1d | 2027-08-31 | 2027-08-31 | S02-020 | 0d |
| S02-040 |  | L02 slab concrete and workface release | 2d | 2027-09-01 | 2027-09-02 | S02-030 | 0d |
|  | 03 | **Level 03 - Structure** |  | 2027-09-03 | 2027-09-10 |  |  |
| S03-010 |  | L03 vertical elements / core | 2d | 2027-09-03 | 2027-09-04 | S02-040 | 0d |
| S03-020 |  | L03 slab formwork and reinforcement | 2d | 2027-09-06 | 2027-09-07 | S03-010 | 0d |
| S03-030 |  | L03 MEP embeds and pre-pour inspection | 1d | 2027-09-08 | 2027-09-08 | S03-020 | 0d |
| S03-040 |  | L03 slab concrete and workface release | 2d | 2027-09-09 | 2027-09-10 | S03-030 | 0d |
|  | 04 | **Level 04 - Structure** |  | 2027-09-11 | 2027-09-18 |  |  |
| S04-010 |  | L04 vertical elements / core | 2d | 2027-09-11 | 2027-09-13 | S03-040 | 0d |
| S04-020 |  | L04 slab formwork and reinforcement | 2d | 2027-09-14 | 2027-09-15 | S04-010 | 0d |
| S04-030 |  | L04 MEP embeds and pre-pour inspection | 1d | 2027-09-16 | 2027-09-16 | S04-020 | 0d |
| S04-040 |  | L04 slab concrete and workface release | 2d | 2027-09-17 | 2027-09-18 | S04-030 | 0d |
|  | 05 | **Level 05 - Structure** |  | 2027-09-20 | 2027-09-27 |  |  |
| S05-010 |  | L05 vertical elements / core | 2d | 2027-09-20 | 2027-09-21 | S04-040 | 0d |
| S05-020 |  | L05 slab formwork and reinforcement | 2d | 2027-09-22 | 2027-09-23 | S05-010 | 0d |
| S05-030 |  | L05 MEP embeds and pre-pour inspection | 1d | 2027-09-24 | 2027-09-24 | S05-020 | 0d |
| S05-040 |  | L05 slab concrete and workface release | 2d | 2027-09-25 | 2027-09-27 | S05-030 | 0d |
|  | 06 | **Level 06 - Structure** |  | 2027-09-28 | 2027-10-05 |  |  |
| S06-010 |  | L06 vertical elements / core | 2d | 2027-09-28 | 2027-09-29 | S05-040 | 0d |
| S06-020 |  | L06 slab formwork and reinforcement | 2d | 2027-09-30 | 2027-10-01 | S06-010 | 0d |

| ID | WBS | Task | Duration | Start | Finish | Predecessors | Total float |
| --- | --- | --- | --- | --- | --- | --- | --- |
| S06-030 |  | L06 MEP embeds and pre-pour inspection | 1d | 2027-10-02 | 2027-10-02 | S06-020 | 0d |
| S06-040 |  | L06 slab concrete and workface release | 2d | 2027-10-04 | 2027-10-05 | S06-030 | 0d |
|  | 07 | **Level 07 - Structure** |  | 2027-10-06 | 2027-10-13 |  |  |
| S07-010 |  | L07 vertical elements / core | 2d | 2027-10-06 | 2027-10-07 | S06-040 | 0d |
| S07-020 |  | L07 slab formwork and reinforcement | 2d | 2027-10-08 | 2027-10-09 | S07-010 | 0d |
| S07-030 |  | L07 MEP embeds and pre-pour inspection | 1d | 2027-10-11 | 2027-10-11 | S07-020 | 0d |
| S07-040 |  | L07 slab concrete and workface release | 2d | 2027-10-12 | 2027-10-13 | S07-030 | 0d |
|  | 08 | **Level 08 - Structure** |  | 2027-10-14 | 2027-10-21 |  |  |
| S08-010 |  | L08 vertical elements / core | 2d | 2027-10-14 | 2027-10-15 | S07-040 | 0d |
| S08-020 |  | L08 slab formwork and reinforcement | 2d | 2027-10-16 | 2027-10-18 | S08-010 | 0d |
| S08-030 |  | L08 MEP embeds and pre-pour inspection | 1d | 2027-10-19 | 2027-10-19 | S08-020 | 0d |
| S08-040 |  | L08 slab concrete and workface release | 2d | 2027-10-20 | 2027-10-21 | S08-030 | 0d |
|  | 09 | **Level 09 - Structure** |  | 2027-10-22 | 2027-10-29 |  |  |
| S09-010 |  | L09 vertical elements / core | 2d | 2027-10-22 | 2027-10-23 | S08-040 | 0d |
| S09-020 |  | L09 slab formwork and reinforcement | 2d | 2027-10-25 | 2027-10-26 | S09-010 | 0d |
| S09-030 |  | L09 MEP embeds and pre-pour inspection | 1d | 2027-10-27 | 2027-10-27 | S09-020 | 0d |
| S09-040 |  | L09 slab concrete and workface release | 2d | 2027-10-28 | 2027-10-29 | S09-030 | 0d |
|  | 10 | **Level 10 - Structure** |  | 2027-10-30 | 2027-11-06 |  |  |
| S10-010 |  | L10 vertical elements / core | 2d | 2027-10-30 | 2027-11-01 | S09-040 | 0d |
| S10-020 |  | L10 slab formwork and reinforcement | 2d | 2027-11-02 | 2027-11-03 | S10-010 | 0d |
| S10-030 |  | L10 MEP embeds and pre-pour inspection | 1d | 2027-11-04 | 2027-11-04 | S10-020 | 0d |
| S10-040 |  | L10 slab concrete and workface release | 2d | 2027-11-05 | 2027-11-06 | S10-030 | 0d |
|  | 11 | **Level 11 - Structure** |  | 2027-11-08 | 2027-11-15 |  |  |
| S11-010 |  | L11 vertical elements / core | 2d | 2027-11-08 | 2027-11-09 | S10-040 | 0d |
| S11-020 |  | L11 slab formwork and reinforcement | 2d | 2027-11-10 | 2027-11-11 | S11-010 | 0d |
| S11-030 |  | L11 MEP embeds and pre-pour inspection | 1d | 2027-11-12 | 2027-11-12 | S11-020 | 0d |
| S11-040 |  | L11 slab concrete and workface release | 2d | 2027-11-13 | 2027-11-15 | S11-030 | 0d |
|  | 12 | **Level 12 - Structure** |  | 2027-11-16 | 2027-11-23 |  |  |
| S12-010 |  | L12 vertical elements / core | 2d | 2027-11-16 | 2027-11-17 | S11-040 | 0d |
| S12-020 |  | L12 slab formwork and reinforcement | 2d | 2027-11-18 | 2027-11-19 | S12-010 | 0d |
| S12-030 |  | L12 MEP embeds and pre-pour inspection | 1d | 2027-11-20 | 2027-11-20 | S12-020 | 0d |
| S12-040 |  | L12 slab concrete and workface release | 2d | 2027-11-22 | 2027-11-23 | S12-030 | 0d |
|  | 13 | **Level 13 - Structure** |  | 2027-11-24 | 2027-12-01 |  |  |
| S13-010 |  | L13 vertical elements / core | 2d | 2027-11-24 | 2027-11-25 | S12-040 | 0d |
| S13-020 |  | L13 slab formwork and reinforcement | 2d | 2027-11-26 | 2027-11-27 | S13-010 | 0d |
| S13-030 |  | L13 MEP embeds and pre-pour inspection | 1d | 2027-11-29 | 2027-11-29 | S13-020 | 0d |
| S13-040 |  | L13 slab concrete and workface release | 2d | 2027-11-30 | 2027-12-01 | S13-030 | 0d |
|  | 14 | **Level 14 - Structure** |  | 2027-12-02 | 2027-12-09 |  |  |
| S14-010 |  | L14 vertical elements / core | 2d | 2027-12-02 | 2027-12-03 | S13-040 | 0d |
| S14-020 |  | L14 slab formwork and reinforcement | 2d | 2027-12-04 | 2027-12-06 | S14-010 | 0d |
| S14-030 |  | L14 MEP embeds and pre-pour inspection | 1d | 2027-12-07 | 2027-12-07 | S14-020 | 0d |
| S14-040 |  | L14 slab concrete and workface release | 2d | 2027-12-08 | 2027-12-09 | S14-030 | 0d |
|  | 15 | **Level 15 - Structure** |  | 2027-12-10 | 2027-12-17 |  |  |
| S15-010 |  | L15 vertical elements / core | 2d | 2027-12-10 | 2027-12-11 | S14-040 | 0d |
| S15-020 |  | L15 slab formwork and reinforcement | 2d | 2027-12-13 | 2027-12-14 | S15-010 | 0d |
| S15-030 |  | L15 MEP embeds and pre-pour inspection | 1d | 2027-12-15 | 2027-12-15 | S15-020 | 0d |
| S15-040 |  | L15 slab concrete and workface release | 2d | 2027-12-16 | 2027-12-17 | S15-030 | 0d |
|  | 03 | **Roof** |  | 2027-12-18 | 2028-01-01 |  |  |
| RF-010 |  | Roof slab formwork, reinforcement and embeds | 6d | 2027-12-18 | 2027-12-24 | S15-040 | 22d |
| RF-020 |  | Roof slab pour and structural release | 7d | 2027-12-25 | 2028-01-01 | RF-010 | 22d |
|  | 05 | **Envelope & Waterproofing** |  | 2027-09-11 | 2028-01-22 |  |  |
|  | 01 | **Facade & Glazing** |  | 2027-09-11 | 2028-01-22 |  |  |
| ENV-01-010 |  | Facade brackets and substrate L01-L03 | 10d | 2027-09-11 | 2027-09-22 | S03-040, PRE-070 | 84d |
| ENV-01-020 |  | Facade glazing / cladding L01-L03 | 15d | 2027-09-23 | 2027-10-09 | ENV-01-010 | 84d |
| ENV-02-010 |  | Facade brackets and substrate L04-L06 | 10d | 2027-10-06 | 2027-10-16 | S06-040, PRE-070 | 63d |
| ENV-01-030 |  | Facade sealants and water testing L01-L03 | 6d | 2027-10-11 | 2027-10-16 | ENV-01-020 | 84d |
| ENV-02-020 |  | Facade glazing / cladding L04-L06 | 15d | 2027-10-18 | 2027-11-03 | ENV-02-010 | 63d |
| ENV-03-010 |  | Facade brackets and substrate L07-L09 | 10d | 2027-10-30 | 2027-11-10 | S09-040, PRE-070 | 42d |
| ENV-02-030 |  | Facade sealants and water testing L04-L06 | 6d | 2027-11-04 | 2027-11-10 | ENV-02-020 | 63d |
| ENV-03-020 |  | Facade glazing / cladding L07-L09 | 15d | 2027-11-11 | 2027-11-27 | ENV-03-010 | 42d |
| ENV-04-010 |  | Facade brackets and substrate L10-L12 | 10d | 2027-11-24 | 2027-12-04 | S12-040, PRE-070 | 21d |
| ENV-03-030 |  | Facade sealants and water testing L07-L09 | 6d | 2027-11-29 | 2027-12-04 | ENV-03-020 | 42d |
| ENV-04-020 |  | Facade glazing / cladding L10-L12 | 15d | 2027-12-06 | 2027-12-22 | ENV-04-010 | 21d |
| ENV-05-010 |  | Facade brackets and substrate L13-L15 | 10d | 2027-12-18 | 2027-12-29 | S15-040, PRE-070 | 0d |
| ENV-04-030 |  | Facade sealants and water testing L10-L12 | 6d | 2027-12-23 | 2027-12-29 | ENV-04-020 | 21d |
| ENV-05-020 |  | Facade glazing / cladding L13-L15 | 15d | 2027-12-30 | 2028-01-15 | ENV-05-010 | 0d |
| ENV-05-030 |  | Facade sealants and water testing L13-L15 | 6d | 2028-01-17 | 2028-01-22 | ENV-05-020 | 0d |
|  | 02 | **Roof Waterproofing** |  | 2028-01-03 | 2028-01-21 |  |  |
| RF-030 |  | Roof falls, waterproofing and insulation | 12d | 2028-01-03 | 2028-01-15 | RF-020 | 22d |
| RF-040 |  | Roof waterproofing flood test and protection | 5d | 2028-01-17 | 2028-01-21 | RF-030 | 22d |

| ID | WBS | Task | Duration | Start | Finish | Predecessors | Total float |
| --- | --- | --- | --- | --- | --- | --- | --- |
|  | 06 | **MEP Rough-In & Systems** |  | 2027-01-28 | 2028-02-28 |  |  |
|  | 01 | **Plant & Distribution** |  | 2027-01-28 | 2027-09-30 |  |  |
| MEP-010 |  | MEP coordinated shop drawings / builders work | 25d | 2027-01-28 | 2027-02-25 | PRE-010 | 254d |
| MEP-020 |  | Main electrical and plumbing risers | 30d | 2027-07-27 | 2027-08-30 | B1-040, MEP-010 | 126d |
| MEP-030 |  | MEP equipment delivery and plant room readiness | 12d | 2027-07-27 | 2027-08-09 | PRE-060, B1-040 | 119d |
| MEP-040 |  | Install main plant and electrical switchgear | 25d | 2027-08-10 | 2027-09-07 | MEP-030 | 119d |
| MEP-050 |  | Main distribution pipework and cable containment | 20d | 2027-09-08 | 2027-09-30 | MEP-020, MEP-040 | 119d |
|  | 02 | **Floor MEP Rough-In** |  | 2027-08-26 | 2028-02-28 |  |  |
|  | 01 | **Level 01 - MEP** |  | 2027-08-26 | 2027-11-22 |  |  |
| L01-M10 |  | L01 MEP first fix / rough-in | 9d | 2027-08-26 | 2027-09-04 | S01-040, MEP-010 | 99d |
| L01-M20 |  | L01 MEP rough-in pressure / continuity tests | 3d | 2027-09-06 | 2027-09-08 | L01-M10 | 99d |
| L01-M30 |  | L01 MEP second fix and fixtures | 7d | 2027-11-15 | 2027-11-22 | L01-A50, MEP-050 | 84d |
|  | 02 | **Level 02 - MEP** |  | 2027-09-03 | 2027-11-22 |  |  |
| L02-M10 |  | L02 MEP first fix / rough-in | 9d | 2027-09-03 | 2027-09-13 | S02-040, MEP-010 | 92d |
| L02-M20 |  | L02 MEP rough-in pressure / continuity tests | 3d | 2027-09-14 | 2027-09-16 | L02-M10 | 92d |
| L02-M30 |  | L02 MEP second fix and fixtures | 7d | 2027-11-15 | 2027-11-22 | L02-A50, MEP-050 | 84d |
|  | 03 | **Level 03 - MEP** |  | 2027-09-11 | 2027-11-22 |  |  |
| L03-M10 |  | L03 MEP first fix / rough-in | 9d | 2027-09-11 | 2027-09-21 | S03-040, MEP-010 | 85d |
| L03-M20 |  | L03 MEP rough-in pressure / continuity tests | 3d | 2027-09-22 | 2027-09-24 | L03-M10 | 85d |
| L03-M30 |  | L03 MEP second fix and fixtures | 7d | 2027-11-15 | 2027-11-22 | L03-A50, MEP-050 | 84d |
|  | 04 | **Level 04 - MEP** |  | 2027-09-20 | 2027-12-16 |  |  |
| L04-M10 |  | L04 MEP first fix / rough-in | 9d | 2027-09-20 | 2027-09-29 | S04-040, MEP-010 | 78d |
| L04-M20 |  | L04 MEP rough-in pressure / continuity tests | 3d | 2027-09-30 | 2027-10-02 | L04-M10 | 78d |
| L04-M30 |  | L04 MEP second fix and fixtures | 7d | 2027-12-09 | 2027-12-16 | L04-A50, MEP-050 | 63d |
|  | 05 | **Level 05 - MEP** |  | 2027-09-28 | 2027-12-16 |  |  |
| L05-M10 |  | L05 MEP first fix / rough-in | 9d | 2027-09-28 | 2027-10-07 | S05-040, MEP-010 | 71d |
| L05-M20 |  | L05 MEP rough-in pressure / continuity tests | 3d | 2027-10-08 | 2027-10-11 | L05-M10 | 71d |
| L05-M30 |  | L05 MEP second fix and fixtures | 7d | 2027-12-09 | 2027-12-16 | L05-A50, MEP-050 | 63d |
|  | 06 | **Level 06 - MEP** |  | 2027-10-06 | 2027-12-16 |  |  |
| L06-M10 |  | L06 MEP first fix / rough-in | 9d | 2027-10-06 | 2027-10-15 | S06-040, MEP-010 | 64d |
| L06-M20 |  | L06 MEP rough-in pressure / continuity tests | 3d | 2027-10-16 | 2027-10-19 | L06-M10 | 64d |
| L06-M30 |  | L06 MEP second fix and fixtures | 7d | 2027-12-09 | 2027-12-16 | L06-A50, MEP-050 | 63d |
|  | 07 | **Level 07 - MEP** |  | 2027-10-14 | 2028-01-10 |  |  |
| L07-M10 |  | L07 MEP first fix / rough-in | 9d | 2027-10-14 | 2027-10-23 | S07-040, MEP-010 | 57d |
| L07-M20 |  | L07 MEP rough-in pressure / continuity tests | 3d | 2027-10-25 | 2027-10-27 | L07-M10 | 57d |
| L07-M30 |  | L07 MEP second fix and fixtures | 7d | 2028-01-03 | 2028-01-10 | L07-A50, MEP-050 | 42d |
|  | 08 | **Level 08 - MEP** |  | 2027-10-22 | 2028-01-10 |  |  |
| L08-M10 |  | L08 MEP first fix / rough-in | 9d | 2027-10-22 | 2027-11-01 | S08-040, MEP-010 | 50d |
| L08-M20 |  | L08 MEP rough-in pressure / continuity tests | 3d | 2027-11-02 | 2027-11-04 | L08-M10 | 50d |
| L08-M30 |  | L08 MEP second fix and fixtures | 7d | 2028-01-03 | 2028-01-10 | L08-A50, MEP-050 | 42d |
|  | 09 | **Level 09 - MEP** |  | 2027-10-30 | 2028-01-10 |  |  |
| L09-M10 |  | L09 MEP first fix / rough-in | 9d | 2027-10-30 | 2027-11-09 | S09-040, MEP-010 | 43d |
| L09-M20 |  | L09 MEP rough-in pressure / continuity tests | 3d | 2027-11-10 | 2027-11-12 | L09-M10 | 43d |
| L09-M30 |  | L09 MEP second fix and fixtures | 7d | 2028-01-03 | 2028-01-10 | L09-A50, MEP-050 | 42d |
|  | 10 | **Level 10 - MEP** |  | 2027-11-08 | 2028-02-03 |  |  |
| L10-M10 |  | L10 MEP first fix / rough-in | 9d | 2027-11-08 | 2027-11-17 | S10-040, MEP-010 | 36d |
| L10-M20 |  | L10 MEP rough-in pressure / continuity tests | 3d | 2027-11-18 | 2027-11-20 | L10-M10 | 36d |
| L10-M30 |  | L10 MEP second fix and fixtures | 7d | 2028-01-27 | 2028-02-03 | L10-A50, MEP-050 | 21d |
|  | 11 | **Level 11 - MEP** |  | 2027-11-16 | 2028-02-03 |  |  |
| L11-M10 |  | L11 MEP first fix / rough-in | 9d | 2027-11-16 | 2027-11-25 | S11-040, MEP-010 | 29d |
| L11-M20 |  | L11 MEP rough-in pressure / continuity tests | 3d | 2027-11-26 | 2027-11-29 | L11-M10 | 29d |
| L11-M30 |  | L11 MEP second fix and fixtures | 7d | 2028-01-27 | 2028-02-03 | L11-A50, MEP-050 | 21d |
|  | 12 | **Level 12 - MEP** |  | 2027-11-24 | 2028-02-03 |  |  |
| L12-M10 |  | L12 MEP first fix / rough-in | 9d | 2027-11-24 | 2027-12-03 | S12-040, MEP-010 | 22d |
| L12-M20 |  | L12 MEP rough-in pressure / continuity tests | 3d | 2027-12-04 | 2027-12-07 | L12-M10 | 22d |
| L12-M30 |  | L12 MEP second fix and fixtures | 7d | 2028-01-27 | 2028-02-03 | L12-A50, MEP-050 | 21d |
|  | 13 | **Level 13 - MEP** |  | 2027-12-02 | 2028-02-28 |  |  |
| L13-M10 |  | L13 MEP first fix / rough-in | 9d | 2027-12-02 | 2027-12-11 | S13-040, MEP-010 | 15d |
| L13-M20 |  | L13 MEP rough-in pressure / continuity tests | 3d | 2027-12-13 | 2027-12-15 | L13-M10 | 15d |
| L13-M30 |  | L13 MEP second fix and fixtures | 7d | 2028-02-21 | 2028-02-28 | L13-A50, MEP-050 | 0d |
|  | 14 | **Level 14 - MEP** |  | 2027-12-10 | 2028-02-28 |  |  |
| L14-M10 |  | L14 MEP first fix / rough-in | 9d | 2027-12-10 | 2027-12-20 | S14-040, MEP-010 | 8d |
| L14-M20 |  | L14 MEP rough-in pressure / continuity tests | 3d | 2027-12-21 | 2027-12-23 | L14-M10 | 8d |
| L14-M30 |  | L14 MEP second fix and fixtures | 7d | 2028-02-21 | 2028-02-28 | L14-A50, MEP-050 | 0d |
|  | 15 | **Level 15 - MEP** |  | 2027-12-18 | 2028-02-28 |  |  |
| L15-M10 |  | L15 MEP first fix / rough-in | 9d | 2027-12-18 | 2027-12-28 | S15-040, MEP-010 | 1d |
| L15-M20 |  | L15 MEP rough-in pressure / continuity tests | 3d | 2027-12-29 | 2027-12-31 | L15-M10 | 1d |
| L15-M30 |  | L15 MEP second fix and fixtures | 7d | 2028-02-21 | 2028-02-28 | L15-A50, MEP-050 | 0d |
|  | 07 | **Architectural Finishes** |  | 2027-08-26 | 2028-03-04 |  |  |
|  | 01 | **Floor Finishes** |  | 2027-08-26 | 2028-03-04 |  |  |

| ID | WBS | Task | Duration | Start | Finish | Predecessors | Total float |
| --- | --- | --- | --- | --- | --- | --- | --- |
|  | 01 | **Level 01 - Finishes** |  | 2027-08-26 | 2027-11-27 |  |  |
| L01-A10 |  | L01 partitions and wall framing | 10d | 2027-08-26 | 2027-09-06 | S01-040 | 101d |
| L01-A20 |  | L01 plaster / board closing | 10d | 2027-09-09 | 2027-09-20 | L01-A10, L01-M20 | 99d |
| L01-A30 |  | L01 screeds and wet area waterproofing | 8d | 2027-09-21 | 2027-09-29 | L01-A20 | 99d |
| L01-A40 |  | L01 tiling and flooring | 12d | 2027-10-18 | 2027-10-30 | L01-A30, ENV-01-030 | 84d |
| L01-A50 |  | L01 ceilings, paint and joinery | 12d | 2027-11-01 | 2027-11-13 | L01-A40 | 84d |
| L01-A60 |  | L01 final finishes / snagging | 5d | 2027-11-23 | 2027-11-27 | L01-M30 | 84d |
|  | 02 | **Level 02 - Finishes** |  | 2027-09-03 | 2027-11-27 |  |  |
| L02-A10 |  | L02 partitions and wall framing | 10d | 2027-09-03 | 2027-09-14 | S02-040 | 94d |
| L02-A20 |  | L02 plaster / board closing | 10d | 2027-09-17 | 2027-09-28 | L02-A10, L02-M20 | 92d |
| L02-A30 |  | L02 screeds and wet area waterproofing | 8d | 2027-09-29 | 2027-10-07 | L02-A20 | 92d |
| L02-A40 |  | L02 tiling and flooring | 12d | 2027-10-18 | 2027-10-30 | L02-A30, ENV-01-030 | 84d |
| L02-A50 |  | L02 ceilings, paint and joinery | 12d | 2027-11-01 | 2027-11-13 | L02-A40 | 84d |
| L02-A60 |  | L02 final finishes / snagging | 5d | 2027-11-23 | 2027-11-27 | L02-M30 | 84d |
|  | 03 | **Level 03 - Finishes** |  | 2027-09-11 | 2027-11-27 |  |  |
| L03-A10 |  | L03 partitions and wall framing | 10d | 2027-09-11 | 2027-09-22 | S03-040 | 87d |
| L03-A20 |  | L03 plaster / board closing | 10d | 2027-09-25 | 2027-10-06 | L03-A10, L03-M20 | 85d |
| L03-A30 |  | L03 screeds and wet area waterproofing | 8d | 2027-10-07 | 2027-10-15 | L03-A20 | 85d |
| L03-A40 |  | L03 tiling and flooring | 12d | 2027-10-18 | 2027-10-30 | L03-A30, ENV-01-030 | 84d |
| L03-A50 |  | L03 ceilings, paint and joinery | 12d | 2027-11-01 | 2027-11-13 | L03-A40 | 84d |
| L03-A60 |  | L03 final finishes / snagging | 5d | 2027-11-23 | 2027-11-27 | L03-M30 | 84d |
|  | 04 | **Level 04 - Finishes** |  | 2027-09-20 | 2027-12-22 |  |  |
| L04-A10 |  | L04 partitions and wall framing | 10d | 2027-09-20 | 2027-09-30 | S04-040 | 80d |
| L04-A20 |  | L04 plaster / board closing | 10d | 2027-10-04 | 2027-10-14 | L04-A10, L04-M20 | 78d |
| L04-A30 |  | L04 screeds and wet area waterproofing | 8d | 2027-10-15 | 2027-10-23 | L04-A20 | 78d |
| L04-A40 |  | L04 tiling and flooring | 12d | 2027-11-11 | 2027-11-24 | L04-A30, ENV-02-030 | 63d |
| L04-A50 |  | L04 ceilings, paint and joinery | 12d | 2027-11-25 | 2027-12-08 | L04-A40 | 63d |
| L04-A60 |  | L04 final finishes / snagging | 5d | 2027-12-17 | 2027-12-22 | L04-M30 | 63d |
|  | 05 | **Level 05 - Finishes** |  | 2027-09-28 | 2027-12-22 |  |  |
| L05-A10 |  | L05 partitions and wall framing | 10d | 2027-09-28 | 2027-10-08 | S05-040 | 73d |
| L05-A20 |  | L05 plaster / board closing | 10d | 2027-10-12 | 2027-10-22 | L05-A10, L05-M20 | 71d |
| L05-A30 |  | L05 screeds and wet area waterproofing | 8d | 2027-10-23 | 2027-11-01 | L05-A20 | 71d |
| L05-A40 |  | L05 tiling and flooring | 12d | 2027-11-11 | 2027-11-24 | L05-A30, ENV-02-030 | 63d |
| L05-A50 |  | L05 ceilings, paint and joinery | 12d | 2027-11-25 | 2027-12-08 | L05-A40 | 63d |
| L05-A60 |  | L05 final finishes / snagging | 5d | 2027-12-17 | 2027-12-22 | L05-M30 | 63d |
|  | 06 | **Level 06 - Finishes** |  | 2027-10-06 | 2027-12-22 |  |  |
| L06-A10 |  | L06 partitions and wall framing | 10d | 2027-10-06 | 2027-10-16 | S06-040 | 66d |
| L06-A20 |  | L06 plaster / board closing | 10d | 2027-10-20 | 2027-10-30 | L06-A10, L06-M20 | 64d |
| L06-A30 |  | L06 screeds and wet area waterproofing | 8d | 2027-11-01 | 2027-11-09 | L06-A20 | 64d |
| L06-A40 |  | L06 tiling and flooring | 12d | 2027-11-11 | 2027-11-24 | L06-A30, ENV-02-030 | 63d |
| L06-A50 |  | L06 ceilings, paint and joinery | 12d | 2027-11-25 | 2027-12-08 | L06-A40 | 63d |
| L06-A60 |  | L06 final finishes / snagging | 5d | 2027-12-17 | 2027-12-22 | L06-M30 | 63d |
|  | 07 | **Level 07 - Finishes** |  | 2027-10-14 | 2028-01-15 |  |  |
| L07-A10 |  | L07 partitions and wall framing | 10d | 2027-10-14 | 2027-10-25 | S07-040 | 59d |
| L07-A20 |  | L07 plaster / board closing | 10d | 2027-10-28 | 2027-11-08 | L07-A10, L07-M20 | 57d |
| L07-A30 |  | L07 screeds and wet area waterproofing | 8d | 2027-11-09 | 2027-11-17 | L07-A20 | 57d |
| L07-A40 |  | L07 tiling and flooring | 12d | 2027-12-06 | 2027-12-18 | L07-A30, ENV-03-030 | 42d |
| L07-A50 |  | L07 ceilings, paint and joinery | 12d | 2027-12-20 | 2028-01-01 | L07-A40 | 42d |
| L07-A60 |  | L07 final finishes / snagging | 5d | 2028-01-11 | 2028-01-15 | L07-M30 | 42d |
|  | 08 | **Level 08 - Finishes** |  | 2027-10-22 | 2028-01-15 |  |  |
| L08-A10 |  | L08 partitions and wall framing | 10d | 2027-10-22 | 2027-11-02 | S08-040 | 52d |
| L08-A20 |  | L08 plaster / board closing | 10d | 2027-11-05 | 2027-11-16 | L08-A10, L08-M20 | 50d |
| L08-A30 |  | L08 screeds and wet area waterproofing | 8d | 2027-11-17 | 2027-11-25 | L08-A20 | 50d |
| L08-A40 |  | L08 tiling and flooring | 12d | 2027-12-06 | 2027-12-18 | L08-A30, ENV-03-030 | 42d |
| L08-A50 |  | L08 ceilings, paint and joinery | 12d | 2027-12-20 | 2028-01-01 | L08-A40 | 42d |
| L08-A60 |  | L08 final finishes / snagging | 5d | 2028-01-11 | 2028-01-15 | L08-M30 | 42d |
|  | 09 | **Level 09 - Finishes** |  | 2027-10-30 | 2028-01-15 |  |  |
| L09-A10 |  | L09 partitions and wall framing | 10d | 2027-10-30 | 2027-11-10 | S09-040 | 45d |
| L09-A20 |  | L09 plaster / board closing | 10d | 2027-11-13 | 2027-11-24 | L09-A10, L09-M20 | 43d |
| L09-A30 |  | L09 screeds and wet area waterproofing | 8d | 2027-11-25 | 2027-12-03 | L09-A20 | 43d |
| L09-A40 |  | L09 tiling and flooring | 12d | 2027-12-06 | 2027-12-18 | L09-A30, ENV-03-030 | 42d |
| L09-A50 |  | L09 ceilings, paint and joinery | 12d | 2027-12-20 | 2028-01-01 | L09-A40 | 42d |
| L09-A60 |  | L09 final finishes / snagging | 5d | 2028-01-11 | 2028-01-15 | L09-M30 | 42d |
|  | 10 | **Level 10 - Finishes** |  | 2027-11-08 | 2028-02-09 |  |  |
| L10-A10 |  | L10 partitions and wall framing | 10d | 2027-11-08 | 2027-11-18 | S10-040 | 38d |
| L10-A20 |  | L10 plaster / board closing | 10d | 2027-11-22 | 2027-12-02 | L10-A10, L10-M20 | 36d |
| L10-A30 |  | L10 screeds and wet area waterproofing | 8d | 2027-12-03 | 2027-12-11 | L10-A20 | 36d |
| L10-A40 |  | L10 tiling and flooring | 12d | 2027-12-30 | 2028-01-12 | L10-A30, ENV-04-030 | 21d |
| L10-A50 |  | L10 ceilings, paint and joinery | 12d | 2028-01-13 | 2028-01-26 | L10-A40 | 21d |
| L10-A60 |  | L10 final finishes / snagging | 5d | 2028-02-04 | 2028-02-09 | L10-M30 | 21d |

| ID | WBS | Task | Duration | Start | Finish | Predecessors | Total float |
| --- | --- | --- | --- | --- | --- | --- | --- |
|  | 11 | **Level 11 - Finishes** |  | 2027-11-16 | 2028-02-09 |  |  |
| L11-A10 |  | L11 partitions and wall framing | 10d | 2027-11-16 | 2027-11-26 | S11-040 | 31d |
| L11-A20 |  | L11 plaster / board closing | 10d | 2027-11-30 | 2027-12-10 | L11-A10, L11-M20 | 29d |
| L11-A30 |  | L11 screeds and wet area waterproofing | 8d | 2027-12-11 | 2027-12-20 | L11-A20 | 29d |
| L11-A40 |  | L11 tiling and flooring | 12d | 2027-12-30 | 2028-01-12 | L11-A30, ENV-04-030 | 21d |
| L11-A50 |  | L11 ceilings, paint and joinery | 12d | 2028-01-13 | 2028-01-26 | L11-A40 | 21d |
| L11-A60 |  | L11 final finishes / snagging | 5d | 2028-02-04 | 2028-02-09 | L11-M30 | 21d |
|  | 12 | **Level 12 - Finishes** |  | 2027-11-24 | 2028-02-09 |  |  |
| L12-A10 |  | L12 partitions and wall framing | 10d | 2027-11-24 | 2027-12-04 | S12-040 | 24d |
| L12-A20 |  | L12 plaster / board closing | 10d | 2027-12-08 | 2027-12-18 | L12-A10, L12-M20 | 22d |
| L12-A30 |  | L12 screeds and wet area waterproofing | 8d | 2027-12-20 | 2027-12-28 | L12-A20 | 22d |
| L12-A40 |  | L12 tiling and flooring | 12d | 2027-12-30 | 2028-01-12 | L12-A30, ENV-04-030 | 21d |
| L12-A50 |  | L12 ceilings, paint and joinery | 12d | 2028-01-13 | 2028-01-26 | L12-A40 | 21d |
| L12-A60 |  | L12 final finishes / snagging | 5d | 2028-02-04 | 2028-02-09 | L12-M30 | 21d |
|  | 13 | **Level 13 - Finishes** |  | 2027-12-02 | 2028-03-04 |  |  |
| L13-A10 |  | L13 partitions and wall framing | 10d | 2027-12-02 | 2027-12-13 | S13-040 | 17d |
| L13-A20 |  | L13 plaster / board closing | 10d | 2027-12-16 | 2027-12-27 | L13-A10, L13-M20 | 15d |
| L13-A30 |  | L13 screeds and wet area waterproofing | 8d | 2027-12-28 | 2028-01-05 | L13-A20 | 15d |
| L13-A40 |  | L13 tiling and flooring | 12d | 2028-01-24 | 2028-02-05 | L13-A30, ENV-05-030 | 0d |
| L13-A50 |  | L13 ceilings, paint and joinery | 12d | 2028-02-07 | 2028-02-19 | L13-A40 | 0d |
| L13-A60 |  | L13 final finishes / snagging | 5d | 2028-02-29 | 2028-03-04 | L13-M30 | 0d |
|  | 14 | **Level 14 - Finishes** |  | 2027-12-10 | 2028-03-04 |  |  |
| L14-A10 |  | L14 partitions and wall framing | 10d | 2027-12-10 | 2027-12-21 | S14-040 | 10d |
| L14-A20 |  | L14 plaster / board closing | 10d | 2027-12-24 | 2028-01-04 | L14-A10, L14-M20 | 8d |
| L14-A30 |  | L14 screeds and wet area waterproofing | 8d | 2028-01-05 | 2028-01-13 | L14-A20 | 8d |
| L14-A40 |  | L14 tiling and flooring | 12d | 2028-01-24 | 2028-02-05 | L14-A30, ENV-05-030 | 0d |
| L14-A50 |  | L14 ceilings, paint and joinery | 12d | 2028-02-07 | 2028-02-19 | L14-A40 | 0d |
| L14-A60 |  | L14 final finishes / snagging | 5d | 2028-02-29 | 2028-03-04 | L14-M30 | 0d |
|  | 15 | **Level 15 - Finishes** |  | 2027-12-18 | 2028-03-04 |  |  |
| L15-A10 |  | L15 partitions and wall framing | 10d | 2027-12-18 | 2027-12-29 | S15-040 | 3d |
| L15-A20 |  | L15 plaster / board closing | 10d | 2028-01-01 | 2028-01-12 | L15-A10, L15-M20 | 1d |
| L15-A30 |  | L15 screeds and wet area waterproofing | 8d | 2028-01-13 | 2028-01-21 | L15-A20 | 1d |
| L15-A40 |  | L15 tiling and flooring | 12d | 2028-01-24 | 2028-02-05 | L15-A30, ENV-05-030 | 0d |
| L15-A50 |  | L15 ceilings, paint and joinery | 12d | 2028-02-07 | 2028-02-19 | L15-A40 | 0d |
| L15-A60 |  | L15 final finishes / snagging | 5d | 2028-02-29 | 2028-03-04 | L15-M30 | 0d |
|  | 02 | **Common Areas** |  | 2027-08-31 | 2028-02-05 |  |  |
| COM-010 |  | Lobby and common corridor finishes | 25d | 2027-08-31 | 2027-09-28 | GF-040, MEP-020 | 181d |
| COM-020 |  | Staircase finishes and handrails | 30d | 2028-01-03 | 2028-02-05 | M-STRUCT | 69d |
|  | 08 | **Vertical Transportation & External Works** |  | 2027-08-24 | 2028-03-08 |  |  |
| EXT-010 |  | External drainage and utility tie-ins | 20d | 2027-08-24 | 2027-09-15 | SUB-100 | 157d |
| LFT-010 |  | Lift shaft survey and guide rail installation | 20d | 2028-01-03 | 2028-01-25 | M-STRUCT, PRE-060 | 27d |
| EXT-020 |  | External paving, access and landscaping | 20d | 2028-01-24 | 2028-02-15 | EXT-010, M-ENVELOPE | 46d |
| LFT-020 |  | Lift equipment installation | 25d | 2028-01-26 | 2028-02-23 | LFT-010 | 27d |
| LFT-030 |  | Lift testing and authority inspection | 12d | 2028-02-24 | 2028-03-08 | LFT-020 | 27d |
|  | 09 | **Testing, Commissioning & Handover** |  | 2028-01-24 | 2028-05-13 |  |  |
| TST-010 |  | MEP precommissioning and flushing | 15d | 2028-01-24 | 2028-02-09 | MEP-050, M-ENVELOPE | 21d |
| TST-020 |  | Integrated MEP functional testing | 20d | 2028-03-06 | 2028-03-28 | TST-010, L01-A60, L02-A60, L03-A60, L04-A60, L05-A60, L06-A60, L07-A60, L08-A60, L09-A60, L10-A60, L11-A60, L12-A60, L13-A60, L14-A60, L15-A60 | 0d |
| TST-030 |  | Fire / life safety integrated test and inspection | 10d | 2028-03-29 | 2028-04-08 | TST-020 | 0d |
| TST-040 |  | Authority inspections and occupancy approvals | 15d | 2028-04-10 | 2028-04-26 | TST-030, LFT-030, EXT-020 | 0d |
| TST-050 |  | Final snag closeout, O&M manuals and training | 15d | 2028-04-27 | 2028-05-13 | TST-040, COM-010, COM-020 | 0d |

## Version 2 (data date 2027-03-01, saved 2026-11-01, file RES-TWR-UPD01.xer)

Note of the change: Publish Residential Tower schedule recovery case study

Last finish 2028-05-13 → 2028-05-31 (+18d). Complete tasks 0 → 7.

Changed:

| ID | Task | Start | Finish | Complete | Total float |
| --- | --- | --- | --- | --- | --- |
| 01 | **Project Milestones & Controls** |  | 2028-05-13 → 2028-05-31 (+18d) |  |  |
| M-START | Project Commencement | 2027-01-05 A | 2027-01-05 A | 0% → 100% | 0d → none |
| M-STRUCT | Structure Complete | 2028-01-01 → 2028-01-19 (+18d) | 2028-01-01 → 2028-01-19 (+18d) |  |  |
| M-ENVELOPE | Building Envelope Complete | 2028-01-22 → 2028-02-09 (+18d) | 2028-01-22 → 2028-02-09 (+18d) |  |  |
| M-HANDOVER | Practical Completion / Handover | 2028-05-13 → 2028-05-31 (+18d) | 2028-05-13 → 2028-05-31 (+18d) |  |  |
| 02 | **Preconstruction & Mobilization** |  | 2027-05-12 → 2027-05-20 (+8d) |  |  |
| PRE-010 | Construction drawings / design coordination | 2027-01-05 A | 2027-01-27 → 2027-01-29 A (+2d) | 0% → 100% | 183d → none |
| PRE-020 | Permits and authority mobilization approvals | 2027-01-05 A | 2027-02-02 → 2027-02-11 A (+9d) | 0% → 100% | 0d → none |
| PRE-030 | Site mobilization and temporary facilities | 2027-01-05 A | 2027-01-15 A | 0% → 100% | 11d → none |
| PRE-040 | Survey control and site setting out | 2027-01-16 A | 2027-01-20 A | 0% → 100% | 11d → none |
| PRE-050 | HSE, QA/QC and method statement approvals | 2027-01-16 A | 2027-01-25 A | 0% → 100% | 13d → none |
| PRE-060 | Long-lead equipment submittals and procurement | 2027-01-28 → 2027-01-30 A (+2d) | 2027-05-12 → 2027-05-20 (+8d) | 0% → 22% | 183d → 191d |
| PRE-070 | Facade system shop drawings and procurement | 2027-01-28 → 2027-01-30 A (+2d) | 2027-04-24 → 2027-05-08 (+14d) | 0% → 20% | 203d → 206d |
| 03 | **Enabling, Excavation & Substructure** | 2027-02-03 → 2027-02-12 (+9d) | 2027-08-23 → 2027-09-09 (+17d) |  |  |
| 01 | **Earthworks & Retention** | 2027-02-03 → 2027-02-12 (+9d) | 2027-04-08 → 2027-04-26 (+18d) |  |  |
| EXC-010 | Site clearing and utility investigation | 2027-02-03 → 2027-02-12 A (+9d) | 2027-02-09 → 2027-02-19 A (+10d) | 0% → 100% | 0d → none |
| EXC-020 | Excavation support / shoring installation | 2027-02-10 → 2027-02-20 A (+10d) | 2027-03-04 → 2027-03-22 (+18d) | 0% → 5% |  |
| EXC-030 | Excavation to basement 1 | 2027-03-05 → 2027-03-23 (+18d) | 2027-03-18 → 2027-04-05 (+18d) |  |  |
| EXC-040 | Excavation to basement 2 and dewatering | 2027-03-19 → 2027-04-06 (+18d) | 2027-04-05 → 2027-04-22 (+17d) |  |  |
| EXC-050 | Formation inspection and soil acceptance | 2027-04-06 → 2027-04-23 (+17d) | 2027-04-08 → 2027-04-26 (+18d) |  |  |
| 02 | **Foundations & Basements** | 2027-04-09 → 2027-04-27 (+18d) | 2027-08-23 → 2027-09-09 (+17d) |  |  |
| SUB-010 | Blinding concrete and foundation layout | 2027-04-09 → 2027-04-27 (+18d) | 2027-04-14 → 2027-05-01 (+17d) |  |  |
| SUB-020 | Raft reinforcement, embeds and formwork | 2027-04-15 → 2027-05-03 (+18d) | 2027-05-05 → 2027-05-22 (+17d) |  |  |
| SUB-030 | Raft pre-pour inspection | 2027-05-06 → 2027-05-24 (+18d) | 2027-05-07 → 2027-05-25 (+18d) |  |  |
| SUB-040 | Raft concrete pour and curing / strength release | 2027-05-08 → 2027-05-26 (+18d) | 2027-05-19 → 2027-06-05 (+17d) |  |  |
| B2-010 | Basement 2 columns and walls | 2027-05-20 → 2027-06-07 (+18d) | 2027-05-29 → 2027-06-16 (+18d) |  |  |
| B2-020 | Basement 2 slab formwork and reinforcement | 2027-05-31 → 2027-06-17 (+17d) | 2027-06-10 → 2027-06-28 (+18d) |  |  |
| B2-030 | Basement 2 MEP sleeves and pre-pour inspection | 2027-06-11 → 2027-06-29 (+18d) | 2027-06-14 → 2027-07-01 (+17d) |  |  |
| B2-040 | Basement 2 slab pour and strength release | 2027-06-15 → 2027-07-02 (+17d) | 2027-06-22 → 2027-07-09 (+17d) |  |  |
| B1-010 | Basement 1 columns and walls | 2027-06-23 → 2027-07-10 (+17d) | 2027-07-02 → 2027-07-20 (+18d) |  |  |
| B1-020 | Basement 1 slab formwork and reinforcement | 2027-07-03 → 2027-07-21 (+18d) | 2027-07-14 → 2027-07-31 (+17d) |  |  |
| B1-030 | Basement 1 MEP sleeves and pre-pour inspection | 2027-07-15 → 2027-08-02 (+18d) | 2027-07-17 → 2027-08-04 (+18d) |  |  |
| B1-040 | Basement 1 slab pour and strength release | 2027-07-19 → 2027-08-05 (+17d) | 2027-07-26 → 2027-08-12 (+17d) |  |  |
| SUB-090 | Basement external waterproofing and protection | 2027-07-27 → 2027-08-13 (+17d) | 2027-08-11 → 2027-08-28 (+17d) |  |  |
| SUB-100 | Basement backfill and compaction | 2027-08-12 → 2027-08-30 (+18d) | 2027-08-23 → 2027-09-09 (+17d) |  |  |
| 04 | **Superstructure** | 2027-07-27 → 2027-08-13 (+17d) | 2028-01-01 → 2028-01-19 (+18d) |  |  |
| 01 | **Ground Floor** | 2027-07-27 → 2027-08-13 (+17d) | 2027-08-17 → 2027-09-03 (+17d) |  |  |
| GF-010 | Ground floor columns and core walls | 2027-07-27 → 2027-08-13 (+17d) | 2027-08-02 → 2027-08-19 (+17d) |  |  |
| GF-020 | Ground floor slab formwork and reinforcement | 2027-08-03 → 2027-08-20 (+17d) | 2027-08-09 → 2027-08-26 (+17d) |  |  |
| GF-030 | Ground floor embedded services / inspection | 2027-08-10 → 2027-08-27 (+17d) | 2027-08-11 → 2027-08-28 (+17d) |  |  |
| GF-040 | Ground floor concrete pour and release | 2027-08-12 → 2027-08-30 (+18d) | 2027-08-17 → 2027-09-03 (+17d) |  |  |
| 02 | **Residential Floors** | 2027-08-18 → 2027-09-04 (+17d) | 2027-12-17 → 2028-01-04 (+18d) |  |  |
| 01 | **Level 01 - Structure** | 2027-08-18 → 2027-09-04 (+17d) | 2027-08-25 → 2027-09-11 (+17d) |  |  |
| S01-010 | L01 vertical elements / core | 2027-08-18 → 2027-09-04 (+17d) | 2027-08-19 → 2027-09-06 (+18d) |  |  |
| S01-020 | L01 slab formwork and reinforcement | 2027-08-20 → 2027-09-07 (+18d) | 2027-08-21 → 2027-09-08 (+18d) |  |  |
| S01-030 | L01 MEP embeds and pre-pour inspection | 2027-08-23 → 2027-09-09 (+17d) | 2027-08-23 → 2027-09-09 (+17d) |  |  |
| S01-040 | L01 slab concrete and workface release | 2027-08-24 → 2027-09-10 (+17d) | 2027-08-25 → 2027-09-11 (+17d) |  |  |
| 02 | **Level 02 - Structure** | 2027-08-26 → 2027-09-13 (+18d) | 2027-09-02 → 2027-09-20 (+18d) |  |  |
| S02-010 | L02 vertical elements / core | 2027-08-26 → 2027-09-13 (+18d) | 2027-08-27 → 2027-09-14 (+18d) |  |  |
| S02-020 | L02 slab formwork and reinforcement | 2027-08-28 → 2027-09-15 (+18d) | 2027-08-30 → 2027-09-16 (+17d) |  |  |
| S02-030 | L02 MEP embeds and pre-pour inspection | 2027-08-31 → 2027-09-17 (+17d) | 2027-08-31 → 2027-09-17 (+17d) |  |  |
| S02-040 | L02 slab concrete and workface release | 2027-09-01 → 2027-09-18 (+17d) | 2027-09-02 → 2027-09-20 (+18d) |  |  |
| 03 | **Level 03 - Structure** | 2027-09-03 → 2027-09-21 (+18d) | 2027-09-10 → 2027-09-28 (+18d) |  |  |
| S03-010 | L03 vertical elements / core | 2027-09-03 → 2027-09-21 (+18d) | 2027-09-04 → 2027-09-22 (+18d) |  |  |
| S03-020 | L03 slab formwork and reinforcement | 2027-09-06 → 2027-09-23 (+17d) | 2027-09-07 → 2027-09-24 (+17d) |  |  |
| S03-030 | L03 MEP embeds and pre-pour inspection | 2027-09-08 → 2027-09-25 (+17d) | 2027-09-08 → 2027-09-25 (+17d) |  |  |
| S03-040 | L03 slab concrete and workface release | 2027-09-09 → 2027-09-27 (+18d) | 2027-09-10 → 2027-09-28 (+18d) |  |  |
| 04 | **Level 04 - Structure** | 2027-09-11 → 2027-09-29 (+18d) | 2027-09-18 → 2027-10-06 (+18d) |  |  |
| S04-010 | L04 vertical elements / core | 2027-09-11 → 2027-09-29 (+18d) | 2027-09-13 → 2027-09-30 (+17d) |  |  |
| S04-020 | L04 slab formwork and reinforcement | 2027-09-14 → 2027-10-01 (+17d) | 2027-09-15 → 2027-10-02 (+17d) |  |  |
| S04-030 | L04 MEP embeds and pre-pour inspection | 2027-09-16 → 2027-10-04 (+18d) | 2027-09-16 → 2027-10-04 (+18d) |  |  |
| S04-040 | L04 slab concrete and workface release | 2027-09-17 → 2027-10-05 (+18d) | 2027-09-18 → 2027-10-06 (+18d) |  |  |
| 05 | **Level 05 - Structure** | 2027-09-20 → 2027-10-07 (+17d) | 2027-09-27 → 2027-10-14 (+17d) |  |  |
| S05-010 | L05 vertical elements / core | 2027-09-20 → 2027-10-07 (+17d) | 2027-09-21 → 2027-10-08 (+17d) |  |  |
| S05-020 | L05 slab formwork and reinforcement | 2027-09-22 → 2027-10-09 (+17d) | 2027-09-23 → 2027-10-11 (+18d) |  |  |
| S05-030 | L05 MEP embeds and pre-pour inspection | 2027-09-24 → 2027-10-12 (+18d) | 2027-09-24 → 2027-10-12 (+18d) |  |  |
| S05-040 | L05 slab concrete and workface release | 2027-09-25 → 2027-10-13 (+18d) | 2027-09-27 → 2027-10-14 (+17d) |  |  |
| 06 | **Level 06 - Structure** | 2027-09-28 → 2027-10-15 (+17d) | 2027-10-05 → 2027-10-22 (+17d) |  |  |
| S06-010 | L06 vertical elements / core | 2027-09-28 → 2027-10-15 (+17d) | 2027-09-29 → 2027-10-16 (+17d) |  |  |
| S06-020 | L06 slab formwork and reinforcement | 2027-09-30 → 2027-10-18 (+18d) | 2027-10-01 → 2027-10-19 (+18d) |  |  |

| ID | Task | Start | Finish |
| --- | --- | --- | --- |
| S06-030 | L06 MEP embeds and pre-pour inspection | 2027-10-02 → 2027-10-20 (+18d) | 2027-10-02 → 2027-10-20 (+18d) |
| S06-040 | L06 slab concrete and workface release | 2027-10-04 → 2027-10-21 (+17d) | 2027-10-05 → 2027-10-22 (+17d) |
| 07 | **Level 07 - Structure** | 2027-10-06 → 2027-10-23 (+17d) | 2027-10-13 → 2027-10-30 (+17d) |
| S07-010 | L07 vertical elements / core | 2027-10-06 → 2027-10-23 (+17d) | 2027-10-07 → 2027-10-25 (+18d) |
| S07-020 | L07 slab formwork and reinforcement | 2027-10-08 → 2027-10-26 (+18d) | 2027-10-09 → 2027-10-27 (+18d) |
| S07-030 | L07 MEP embeds and pre-pour inspection | 2027-10-11 → 2027-10-28 (+17d) | 2027-10-11 → 2027-10-28 (+17d) |
| S07-040 | L07 slab concrete and workface release | 2027-10-12 → 2027-10-29 (+17d) | 2027-10-13 → 2027-10-30 (+17d) |
| 08 | **Level 08 - Structure** | 2027-10-14 → 2027-11-01 (+18d) | 2027-10-21 → 2027-11-08 (+18d) |
| S08-010 | L08 vertical elements / core | 2027-10-14 → 2027-11-01 (+18d) | 2027-10-15 → 2027-11-02 (+18d) |
| S08-020 | L08 slab formwork and reinforcement | 2027-10-16 → 2027-11-03 (+18d) | 2027-10-18 → 2027-11-04 (+17d) |
| S08-030 | L08 MEP embeds and pre-pour inspection | 2027-10-19 → 2027-11-05 (+17d) | 2027-10-19 → 2027-11-05 (+17d) |
| S08-040 | L08 slab concrete and workface release | 2027-10-20 → 2027-11-06 (+17d) | 2027-10-21 → 2027-11-08 (+18d) |
| 09 | **Level 09 - Structure** | 2027-10-22 → 2027-11-09 (+18d) | 2027-10-29 → 2027-11-16 (+18d) |
| S09-010 | L09 vertical elements / core | 2027-10-22 → 2027-11-09 (+18d) | 2027-10-23 → 2027-11-10 (+18d) |
| S09-020 | L09 slab formwork and reinforcement | 2027-10-25 → 2027-11-11 (+17d) | 2027-10-26 → 2027-11-12 (+17d) |
| S09-030 | L09 MEP embeds and pre-pour inspection | 2027-10-27 → 2027-11-13 (+17d) | 2027-10-27 → 2027-11-13 (+17d) |
| S09-040 | L09 slab concrete and workface release | 2027-10-28 → 2027-11-15 (+18d) | 2027-10-29 → 2027-11-16 (+18d) |
| 10 | **Level 10 - Structure** | 2027-10-30 → 2027-11-17 (+18d) | 2027-11-06 → 2027-11-24 (+18d) |
| S10-010 | L10 vertical elements / core | 2027-10-30 → 2027-11-17 (+18d) | 2027-11-01 → 2027-11-18 (+17d) |
| S10-020 | L10 slab formwork and reinforcement | 2027-11-02 → 2027-11-19 (+17d) | 2027-11-03 → 2027-11-20 (+17d) |
| S10-030 | L10 MEP embeds and pre-pour inspection | 2027-11-04 → 2027-11-22 (+18d) | 2027-11-04 → 2027-11-22 (+18d) |
| S10-040 | L10 slab concrete and workface release | 2027-11-05 → 2027-11-23 (+18d) | 2027-11-06 → 2027-11-24 (+18d) |
| 11 | **Level 11 - Structure** | 2027-11-08 → 2027-11-25 (+17d) | 2027-11-15 → 2027-12-02 (+17d) |
| S11-010 | L11 vertical elements / core | 2027-11-08 → 2027-11-25 (+17d) | 2027-11-09 → 2027-11-26 (+17d) |
| S11-020 | L11 slab formwork and reinforcement | 2027-11-10 → 2027-11-27 (+17d) | 2027-11-11 → 2027-11-29 (+18d) |
| S11-030 | L11 MEP embeds and pre-pour inspection | 2027-11-12 → 2027-11-30 (+18d) | 2027-11-12 → 2027-11-30 (+18d) |
| S11-040 | L11 slab concrete and workface release | 2027-11-13 → 2027-12-01 (+18d) | 2027-11-15 → 2027-12-02 (+17d) |
| 12 | **Level 12 - Structure** | 2027-11-16 → 2027-12-03 (+17d) | 2027-11-23 → 2027-12-10 (+17d) |
| S12-010 | L12 vertical elements / core | 2027-11-16 → 2027-12-03 (+17d) | 2027-11-17 → 2027-12-04 (+17d) |
| S12-020 | L12 slab formwork and reinforcement | 2027-11-18 → 2027-12-06 (+18d) | 2027-11-19 → 2027-12-07 (+18d) |
| S12-030 | L12 MEP embeds and pre-pour inspection | 2027-11-20 → 2027-12-08 (+18d) | 2027-11-20 → 2027-12-08 (+18d) |
| S12-040 | L12 slab concrete and workface release | 2027-11-22 → 2027-12-09 (+17d) | 2027-11-23 → 2027-12-10 (+17d) |
| 13 | **Level 13 - Structure** | 2027-11-24 → 2027-12-11 (+17d) | 2027-12-01 → 2027-12-18 (+17d) |
| S13-010 | L13 vertical elements / core | 2027-11-24 → 2027-12-11 (+17d) | 2027-11-25 → 2027-12-13 (+18d) |
| S13-020 | L13 slab formwork and reinforcement | 2027-11-26 → 2027-12-14 (+18d) | 2027-11-27 → 2027-12-15 (+18d) |
| S13-030 | L13 MEP embeds and pre-pour inspection | 2027-11-29 → 2027-12-16 (+17d) | 2027-11-29 → 2027-12-16 (+17d) |
| S13-040 | L13 slab concrete and workface release | 2027-11-30 → 2027-12-17 (+17d) | 2027-12-01 → 2027-12-18 (+17d) |
| 14 | **Level 14 - Structure** | 2027-12-02 → 2027-12-20 (+18d) | 2027-12-09 → 2027-12-27 (+18d) |
| S14-010 | L14 vertical elements / core | 2027-12-02 → 2027-12-20 (+18d) | 2027-12-03 → 2027-12-21 (+18d) |
| S14-020 | L14 slab formwork and reinforcement | 2027-12-04 → 2027-12-22 (+18d) | 2027-12-06 → 2027-12-23 (+17d) |
| S14-030 | L14 MEP embeds and pre-pour inspection | 2027-12-07 → 2027-12-24 (+17d) | 2027-12-07 → 2027-12-24 (+17d) |
| S14-040 | L14 slab concrete and workface release | 2027-12-08 → 2027-12-25 (+17d) | 2027-12-09 → 2027-12-27 (+18d) |
| 15 | **Level 15 - Structure** | 2027-12-10 → 2027-12-28 (+18d) | 2027-12-17 → 2028-01-04 (+18d) |
| S15-010 | L15 vertical elements / core | 2027-12-10 → 2027-12-28 (+18d) | 2027-12-11 → 2027-12-29 (+18d) |
| S15-020 | L15 slab formwork and reinforcement | 2027-12-13 → 2027-12-30 (+17d) | 2027-12-14 → 2027-12-31 (+17d) |
| S15-030 | L15 MEP embeds and pre-pour inspection | 2027-12-15 → 2028-01-01 (+17d) | 2027-12-15 → 2028-01-01 (+17d) |
| S15-040 | L15 slab concrete and workface release | 2027-12-16 → 2028-01-03 (+18d) | 2027-12-17 → 2028-01-04 (+18d) |
| 03 | **Roof** | 2027-12-18 → 2028-01-05 (+18d) | 2028-01-01 → 2028-01-19 (+18d) |
| RF-010 | Roof slab formwork, reinforcement and embeds | 2027-12-18 → 2028-01-05 (+18d) | 2027-12-24 → 2028-01-11 (+18d) |
| RF-020 | Roof slab pour and structural release | 2027-12-25 → 2028-01-12 (+18d) | 2028-01-01 → 2028-01-19 (+18d) |
| 05 | **Envelope & Waterproofing** | 2027-09-11 → 2027-09-29 (+18d) | 2028-01-22 → 2028-02-09 (+18d) |
| 01 | **Facade & Glazing** | 2027-09-11 → 2027-09-29 (+18d) | 2028-01-22 → 2028-02-09 (+18d) |
| ENV-01-010 | Facade brackets and substrate L01-L03 | 2027-09-11 → 2027-09-29 (+18d) | 2027-09-22 → 2027-10-09 (+17d) |
| ENV-01-020 | Facade glazing / cladding L01-L03 | 2027-09-23 → 2027-10-11 (+18d) | 2027-10-09 → 2027-10-27 (+18d) |
| ENV-02-010 | Facade brackets and substrate L04-L06 | 2027-10-06 → 2027-10-23 (+17d) | 2027-10-16 → 2027-11-03 (+18d) |
| ENV-01-030 | Facade sealants and water testing L01-L03 | 2027-10-11 → 2027-10-28 (+17d) | 2027-10-16 → 2027-11-03 (+18d) |
| ENV-02-020 | Facade glazing / cladding L04-L06 | 2027-10-18 → 2027-11-04 (+17d) | 2027-11-03 → 2027-11-20 (+17d) |
| ENV-03-010 | Facade brackets and substrate L07-L09 | 2027-10-30 → 2027-11-17 (+18d) | 2027-11-10 → 2027-11-27 (+17d) |
| ENV-02-030 | Facade sealants and water testing L04-L06 | 2027-11-04 → 2027-11-22 (+18d) | 2027-11-10 → 2027-11-27 (+17d) |
| ENV-03-020 | Facade glazing / cladding L07-L09 | 2027-11-11 → 2027-11-29 (+18d) | 2027-11-27 → 2027-12-15 (+18d) |
| ENV-04-010 | Facade brackets and substrate L10-L12 | 2027-11-24 → 2027-12-11 (+17d) | 2027-12-04 → 2027-12-22 (+18d) |
| ENV-03-030 | Facade sealants and water testing L07-L09 | 2027-11-29 → 2027-12-16 (+17d) | 2027-12-04 → 2027-12-22 (+18d) |
| ENV-04-020 | Facade glazing / cladding L10-L12 | 2027-12-06 → 2027-12-23 (+17d) | 2027-12-22 → 2028-01-08 (+17d) |
| ENV-05-010 | Facade brackets and substrate L13-L15 | 2027-12-18 → 2028-01-05 (+18d) | 2027-12-29 → 2028-01-15 (+17d) |
| ENV-04-030 | Facade sealants and water testing L10-L12 | 2027-12-23 → 2028-01-10 (+18d) | 2027-12-29 → 2028-01-15 (+17d) |
| ENV-05-020 | Facade glazing / cladding L13-L15 | 2027-12-30 → 2028-01-17 (+18d) | 2028-01-15 → 2028-02-02 (+18d) |
| ENV-05-030 | Facade sealants and water testing L13-L15 | 2028-01-17 → 2028-02-03 (+17d) | 2028-01-22 → 2028-02-09 (+18d) |
| 02 | **Roof Waterproofing** | 2028-01-03 → 2028-01-20 (+17d) | 2028-01-21 → 2028-02-08 (+18d) |
| RF-030 | Roof falls, waterproofing and insulation | 2028-01-03 → 2028-01-20 (+17d) | 2028-01-15 → 2028-02-02 (+18d) |
| RF-040 | Roof waterproofing flood test and protection | 2028-01-17 → 2028-02-03 (+17d) | 2028-01-21 → 2028-02-08 (+18d) |

| ID | Task | Start | Finish | Total float |
| --- | --- | --- | --- | --- |
| 06 | **MEP Rough-In & Systems** | 2027-01-28 → 2027-03-01 (+32d) | 2028-02-28 → 2028-03-16 (+17d) |  |
| 01 | **Plant & Distribution** | 2027-01-28 → 2027-03-01 (+32d) | 2027-09-30 → 2027-10-18 (+18d) |  |
| MEP-010 | MEP coordinated shop drawings / builders work | 2027-01-28 → 2027-03-01 (+32d) | 2027-02-25 → 2027-03-29 (+32d) | 254d → 242d |
| MEP-020 | Main electrical and plumbing risers | 2027-07-27 → 2027-08-13 (+17d) | 2027-08-30 → 2027-09-16 (+17d) |  |
| MEP-030 | MEP equipment delivery and plant room readiness | 2027-07-27 → 2027-08-13 (+17d) | 2027-08-09 → 2027-08-26 (+17d) |  |
| MEP-040 | Install main plant and electrical switchgear | 2027-08-10 → 2027-08-27 (+17d) | 2027-09-07 → 2027-09-24 (+17d) |  |
| MEP-050 | Main distribution pipework and cable containment | 2027-09-08 → 2027-09-25 (+17d) | 2027-09-30 → 2027-10-18 (+18d) |  |
| 02 | **Floor MEP Rough-In** | 2027-08-26 → 2027-09-13 (+18d) | 2028-02-28 → 2028-03-16 (+17d) |  |
| 01 | **Level 01 - MEP** | 2027-08-26 → 2027-09-13 (+18d) | 2027-11-22 → 2027-12-09 (+17d) |  |
| L01-M10 | L01 MEP first fix / rough-in | 2027-08-26 → 2027-09-13 (+18d) | 2027-09-04 → 2027-09-22 (+18d) |  |
| L01-M20 | L01 MEP rough-in pressure / continuity tests | 2027-09-06 → 2027-09-23 (+17d) | 2027-09-08 → 2027-09-25 (+17d) |  |
| L01-M30 | L01 MEP second fix and fixtures | 2027-11-15 → 2027-12-02 (+17d) | 2027-11-22 → 2027-12-09 (+17d) |  |
| 02 | **Level 02 - MEP** | 2027-09-03 → 2027-09-21 (+18d) | 2027-11-22 → 2027-12-09 (+17d) |  |
| L02-M10 | L02 MEP first fix / rough-in | 2027-09-03 → 2027-09-21 (+18d) | 2027-09-13 → 2027-09-30 (+17d) |  |
| L02-M20 | L02 MEP rough-in pressure / continuity tests | 2027-09-14 → 2027-10-01 (+17d) | 2027-09-16 → 2027-10-04 (+18d) |  |
| L02-M30 | L02 MEP second fix and fixtures | 2027-11-15 → 2027-12-02 (+17d) | 2027-11-22 → 2027-12-09 (+17d) |  |
| 03 | **Level 03 - MEP** | 2027-09-11 → 2027-09-29 (+18d) | 2027-11-22 → 2027-12-09 (+17d) |  |
| L03-M10 | L03 MEP first fix / rough-in | 2027-09-11 → 2027-09-29 (+18d) | 2027-09-21 → 2027-10-08 (+17d) |  |
| L03-M20 | L03 MEP rough-in pressure / continuity tests | 2027-09-22 → 2027-10-09 (+17d) | 2027-09-24 → 2027-10-12 (+18d) |  |
| L03-M30 | L03 MEP second fix and fixtures | 2027-11-15 → 2027-12-02 (+17d) | 2027-11-22 → 2027-12-09 (+17d) |  |
| 04 | **Level 04 - MEP** | 2027-09-20 → 2027-10-07 (+17d) | 2027-12-16 → 2028-01-03 (+18d) |  |
| L04-M10 | L04 MEP first fix / rough-in | 2027-09-20 → 2027-10-07 (+17d) | 2027-09-29 → 2027-10-16 (+17d) |  |
| L04-M20 | L04 MEP rough-in pressure / continuity tests | 2027-09-30 → 2027-10-18 (+18d) | 2027-10-02 → 2027-10-20 (+18d) |  |
| L04-M30 | L04 MEP second fix and fixtures | 2027-12-09 → 2027-12-27 (+18d) | 2027-12-16 → 2028-01-03 (+18d) |  |
| 05 | **Level 05 - MEP** | 2027-09-28 → 2027-10-15 (+17d) | 2027-12-16 → 2028-01-03 (+18d) |  |
| L05-M10 | L05 MEP first fix / rough-in | 2027-09-28 → 2027-10-15 (+17d) | 2027-10-07 → 2027-10-25 (+18d) |  |
| L05-M20 | L05 MEP rough-in pressure / continuity tests | 2027-10-08 → 2027-10-26 (+18d) | 2027-10-11 → 2027-10-28 (+17d) |  |
| L05-M30 | L05 MEP second fix and fixtures | 2027-12-09 → 2027-12-27 (+18d) | 2027-12-16 → 2028-01-03 (+18d) |  |
| 06 | **Level 06 - MEP** | 2027-10-06 → 2027-10-23 (+17d) | 2027-12-16 → 2028-01-03 (+18d) |  |
| L06-M10 | L06 MEP first fix / rough-in | 2027-10-06 → 2027-10-23 (+17d) | 2027-10-15 → 2027-11-02 (+18d) |  |
| L06-M20 | L06 MEP rough-in pressure / continuity tests | 2027-10-16 → 2027-11-03 (+18d) | 2027-10-19 → 2027-11-05 (+17d) |  |
| L06-M30 | L06 MEP second fix and fixtures | 2027-12-09 → 2027-12-27 (+18d) | 2027-12-16 → 2028-01-03 (+18d) |  |
| 07 | **Level 07 - MEP** | 2027-10-14 → 2027-11-01 (+18d) | 2028-01-10 → 2028-01-27 (+17d) |  |
| L07-M10 | L07 MEP first fix / rough-in | 2027-10-14 → 2027-11-01 (+18d) | 2027-10-23 → 2027-11-10 (+18d) |  |
| L07-M20 | L07 MEP rough-in pressure / continuity tests | 2027-10-25 → 2027-11-11 (+17d) | 2027-10-27 → 2027-11-13 (+17d) |  |
| L07-M30 | L07 MEP second fix and fixtures | 2028-01-03 → 2028-01-20 (+17d) | 2028-01-10 → 2028-01-27 (+17d) |  |
| 08 | **Level 08 - MEP** | 2027-10-22 → 2027-11-09 (+18d) | 2028-01-10 → 2028-01-27 (+17d) |  |
| L08-M10 | L08 MEP first fix / rough-in | 2027-10-22 → 2027-11-09 (+18d) | 2027-11-01 → 2027-11-18 (+17d) |  |
| L08-M20 | L08 MEP rough-in pressure / continuity tests | 2027-11-02 → 2027-11-19 (+17d) | 2027-11-04 → 2027-11-22 (+18d) |  |
| L08-M30 | L08 MEP second fix and fixtures | 2028-01-03 → 2028-01-20 (+17d) | 2028-01-10 → 2028-01-27 (+17d) |  |
| 09 | **Level 09 - MEP** | 2027-10-30 → 2027-11-17 (+18d) | 2028-01-10 → 2028-01-27 (+17d) |  |
| L09-M10 | L09 MEP first fix / rough-in | 2027-10-30 → 2027-11-17 (+18d) | 2027-11-09 → 2027-11-26 (+17d) |  |
| L09-M20 | L09 MEP rough-in pressure / continuity tests | 2027-11-10 → 2027-11-27 (+17d) | 2027-11-12 → 2027-11-30 (+18d) |  |
| L09-M30 | L09 MEP second fix and fixtures | 2028-01-03 → 2028-01-20 (+17d) | 2028-01-10 → 2028-01-27 (+17d) |  |
| 10 | **Level 10 - MEP** | 2027-11-08 → 2027-11-25 (+17d) | 2028-02-03 → 2028-02-21 (+18d) |  |
| L10-M10 | L10 MEP first fix / rough-in | 2027-11-08 → 2027-11-25 (+17d) | 2027-11-17 → 2027-12-04 (+17d) |  |
| L10-M20 | L10 MEP rough-in pressure / continuity tests | 2027-11-18 → 2027-12-06 (+18d) | 2027-11-20 → 2027-12-08 (+18d) |  |
| L10-M30 | L10 MEP second fix and fixtures | 2028-01-27 → 2028-02-14 (+18d) | 2028-02-03 → 2028-02-21 (+18d) |  |
| 11 | **Level 11 - MEP** | 2027-11-16 → 2027-12-03 (+17d) | 2028-02-03 → 2028-02-21 (+18d) |  |
| L11-M10 | L11 MEP first fix / rough-in | 2027-11-16 → 2027-12-03 (+17d) | 2027-11-25 → 2027-12-13 (+18d) |  |
| L11-M20 | L11 MEP rough-in pressure / continuity tests | 2027-11-26 → 2027-12-14 (+18d) | 2027-11-29 → 2027-12-16 (+17d) |  |
| L11-M30 | L11 MEP second fix and fixtures | 2028-01-27 → 2028-02-14 (+18d) | 2028-02-03 → 2028-02-21 (+18d) |  |
| 12 | **Level 12 - MEP** | 2027-11-24 → 2027-12-11 (+17d) | 2028-02-03 → 2028-02-21 (+18d) |  |
| L12-M10 | L12 MEP first fix / rough-in | 2027-11-24 → 2027-12-11 (+17d) | 2027-12-03 → 2027-12-21 (+18d) |  |
| L12-M20 | L12 MEP rough-in pressure / continuity tests | 2027-12-04 → 2027-12-22 (+18d) | 2027-12-07 → 2027-12-24 (+17d) |  |
| L12-M30 | L12 MEP second fix and fixtures | 2028-01-27 → 2028-02-14 (+18d) | 2028-02-03 → 2028-02-21 (+18d) |  |
| 13 | **Level 13 - MEP** | 2027-12-02 → 2027-12-20 (+18d) | 2028-02-28 → 2028-03-16 (+17d) |  |
| L13-M10 | L13 MEP first fix / rough-in | 2027-12-02 → 2027-12-20 (+18d) | 2027-12-11 → 2027-12-29 (+18d) |  |
| L13-M20 | L13 MEP rough-in pressure / continuity tests | 2027-12-13 → 2027-12-30 (+17d) | 2027-12-15 → 2028-01-01 (+17d) |  |
| L13-M30 | L13 MEP second fix and fixtures | 2028-02-21 → 2028-03-09 (+17d) | 2028-02-28 → 2028-03-16 (+17d) |  |
| 14 | **Level 14 - MEP** | 2027-12-10 → 2027-12-28 (+18d) | 2028-02-28 → 2028-03-16 (+17d) |  |
| L14-M10 | L14 MEP first fix / rough-in | 2027-12-10 → 2027-12-28 (+18d) | 2027-12-20 → 2028-01-06 (+17d) |  |
| L14-M20 | L14 MEP rough-in pressure / continuity tests | 2027-12-21 → 2028-01-07 (+17d) | 2027-12-23 → 2028-01-10 (+18d) |  |
| L14-M30 | L14 MEP second fix and fixtures | 2028-02-21 → 2028-03-09 (+17d) | 2028-02-28 → 2028-03-16 (+17d) |  |
| 15 | **Level 15 - MEP** | 2027-12-18 → 2028-01-05 (+18d) | 2028-02-28 → 2028-03-16 (+17d) |  |
| L15-M10 | L15 MEP first fix / rough-in | 2027-12-18 → 2028-01-05 (+18d) | 2027-12-28 → 2028-01-14 (+17d) |  |
| L15-M20 | L15 MEP rough-in pressure / continuity tests | 2027-12-29 → 2028-01-15 (+17d) | 2027-12-31 → 2028-01-18 (+18d) |  |
| L15-M30 | L15 MEP second fix and fixtures | 2028-02-21 → 2028-03-09 (+17d) | 2028-02-28 → 2028-03-16 (+17d) |  |
| 07 | **Architectural Finishes** | 2027-08-26 → 2027-09-13 (+18d) | 2028-03-04 → 2028-03-22 (+18d) |  |
| 01 | **Floor Finishes** | 2027-08-26 → 2027-09-13 (+18d) | 2028-03-04 → 2028-03-22 (+18d) |  |

| ID | Task | Start | Finish |
| --- | --- | --- | --- |
| 01 | **Level 01 - Finishes** | 2027-08-26 → 2027-09-13 (+18d) | 2027-11-27 → 2027-12-15 (+18d) |
| L01-A10 | L01 partitions and wall framing | 2027-08-26 → 2027-09-13 (+18d) | 2027-09-06 → 2027-09-23 (+17d) |
| L01-A20 | L01 plaster / board closing | 2027-09-09 → 2027-09-27 (+18d) | 2027-09-20 → 2027-10-07 (+17d) |
| L01-A30 | L01 screeds and wet area waterproofing | 2027-09-21 → 2027-10-08 (+17d) | 2027-09-29 → 2027-10-16 (+17d) |
| L01-A40 | L01 tiling and flooring | 2027-10-18 → 2027-11-04 (+17d) | 2027-10-30 → 2027-11-17 (+18d) |
| L01-A50 | L01 ceilings, paint and joinery | 2027-11-01 → 2027-11-18 (+17d) | 2027-11-13 → 2027-12-01 (+18d) |
| L01-A60 | L01 final finishes / snagging | 2027-11-23 → 2027-12-10 (+17d) | 2027-11-27 → 2027-12-15 (+18d) |
| 02 | **Level 02 - Finishes** | 2027-09-03 → 2027-09-21 (+18d) | 2027-11-27 → 2027-12-15 (+18d) |
| L02-A10 | L02 partitions and wall framing | 2027-09-03 → 2027-09-21 (+18d) | 2027-09-14 → 2027-10-01 (+17d) |
| L02-A20 | L02 plaster / board closing | 2027-09-17 → 2027-10-05 (+18d) | 2027-09-28 → 2027-10-15 (+17d) |
| L02-A30 | L02 screeds and wet area waterproofing | 2027-09-29 → 2027-10-16 (+17d) | 2027-10-07 → 2027-10-25 (+18d) |
| L02-A40 | L02 tiling and flooring | 2027-10-18 → 2027-11-04 (+17d) | 2027-10-30 → 2027-11-17 (+18d) |
| L02-A50 | L02 ceilings, paint and joinery | 2027-11-01 → 2027-11-18 (+17d) | 2027-11-13 → 2027-12-01 (+18d) |
| L02-A60 | L02 final finishes / snagging | 2027-11-23 → 2027-12-10 (+17d) | 2027-11-27 → 2027-12-15 (+18d) |
| 03 | **Level 03 - Finishes** | 2027-09-11 → 2027-09-29 (+18d) | 2027-11-27 → 2027-12-15 (+18d) |
| L03-A10 | L03 partitions and wall framing | 2027-09-11 → 2027-09-29 (+18d) | 2027-09-22 → 2027-10-09 (+17d) |
| L03-A20 | L03 plaster / board closing | 2027-09-25 → 2027-10-13 (+18d) | 2027-10-06 → 2027-10-23 (+17d) |
| L03-A30 | L03 screeds and wet area waterproofing | 2027-10-07 → 2027-10-25 (+18d) | 2027-10-15 → 2027-11-02 (+18d) |
| L03-A40 | L03 tiling and flooring | 2027-10-18 → 2027-11-04 (+17d) | 2027-10-30 → 2027-11-17 (+18d) |
| L03-A50 | L03 ceilings, paint and joinery | 2027-11-01 → 2027-11-18 (+17d) | 2027-11-13 → 2027-12-01 (+18d) |
| L03-A60 | L03 final finishes / snagging | 2027-11-23 → 2027-12-10 (+17d) | 2027-11-27 → 2027-12-15 (+18d) |
| 04 | **Level 04 - Finishes** | 2027-09-20 → 2027-10-07 (+17d) | 2027-12-22 → 2028-01-08 (+17d) |
| L04-A10 | L04 partitions and wall framing | 2027-09-20 → 2027-10-07 (+17d) | 2027-09-30 → 2027-10-18 (+18d) |
| L04-A20 | L04 plaster / board closing | 2027-10-04 → 2027-10-21 (+17d) | 2027-10-14 → 2027-11-01 (+18d) |
| L04-A30 | L04 screeds and wet area waterproofing | 2027-10-15 → 2027-11-02 (+18d) | 2027-10-23 → 2027-11-10 (+18d) |
| L04-A40 | L04 tiling and flooring | 2027-11-11 → 2027-11-29 (+18d) | 2027-11-24 → 2027-12-11 (+17d) |
| L04-A50 | L04 ceilings, paint and joinery | 2027-11-25 → 2027-12-13 (+18d) | 2027-12-08 → 2027-12-25 (+17d) |
| L04-A60 | L04 final finishes / snagging | 2027-12-17 → 2028-01-04 (+18d) | 2027-12-22 → 2028-01-08 (+17d) |
| 05 | **Level 05 - Finishes** | 2027-09-28 → 2027-10-15 (+17d) | 2027-12-22 → 2028-01-08 (+17d) |
| L05-A10 | L05 partitions and wall framing | 2027-09-28 → 2027-10-15 (+17d) | 2027-10-08 → 2027-10-26 (+18d) |
| L05-A20 | L05 plaster / board closing | 2027-10-12 → 2027-10-29 (+17d) | 2027-10-22 → 2027-11-09 (+18d) |
| L05-A30 | L05 screeds and wet area waterproofing | 2027-10-23 → 2027-11-10 (+18d) | 2027-11-01 → 2027-11-18 (+17d) |
| L05-A40 | L05 tiling and flooring | 2027-11-11 → 2027-11-29 (+18d) | 2027-11-24 → 2027-12-11 (+17d) |
| L05-A50 | L05 ceilings, paint and joinery | 2027-11-25 → 2027-12-13 (+18d) | 2027-12-08 → 2027-12-25 (+17d) |
| L05-A60 | L05 final finishes / snagging | 2027-12-17 → 2028-01-04 (+18d) | 2027-12-22 → 2028-01-08 (+17d) |
| 06 | **Level 06 - Finishes** | 2027-10-06 → 2027-10-23 (+17d) | 2027-12-22 → 2028-01-08 (+17d) |
| L06-A10 | L06 partitions and wall framing | 2027-10-06 → 2027-10-23 (+17d) | 2027-10-16 → 2027-11-03 (+18d) |
| L06-A20 | L06 plaster / board closing | 2027-10-20 → 2027-11-06 (+17d) | 2027-10-30 → 2027-11-17 (+18d) |
| L06-A30 | L06 screeds and wet area waterproofing | 2027-11-01 → 2027-11-18 (+17d) | 2027-11-09 → 2027-11-26 (+17d) |
| L06-A40 | L06 tiling and flooring | 2027-11-11 → 2027-11-29 (+18d) | 2027-11-24 → 2027-12-11 (+17d) |
| L06-A50 | L06 ceilings, paint and joinery | 2027-11-25 → 2027-12-13 (+18d) | 2027-12-08 → 2027-12-25 (+17d) |
| L06-A60 | L06 final finishes / snagging | 2027-12-17 → 2028-01-04 (+18d) | 2027-12-22 → 2028-01-08 (+17d) |
| 07 | **Level 07 - Finishes** | 2027-10-14 → 2027-11-01 (+18d) | 2028-01-15 → 2028-02-02 (+18d) |
| L07-A10 | L07 partitions and wall framing | 2027-10-14 → 2027-11-01 (+18d) | 2027-10-25 → 2027-11-11 (+17d) |
| L07-A20 | L07 plaster / board closing | 2027-10-28 → 2027-11-15 (+18d) | 2027-11-08 → 2027-11-25 (+17d) |
| L07-A30 | L07 screeds and wet area waterproofing | 2027-11-09 → 2027-11-26 (+17d) | 2027-11-17 → 2027-12-04 (+17d) |
| L07-A40 | L07 tiling and flooring | 2027-12-06 → 2027-12-23 (+17d) | 2027-12-18 → 2028-01-05 (+18d) |
| L07-A50 | L07 ceilings, paint and joinery | 2027-12-20 → 2028-01-06 (+17d) | 2028-01-01 → 2028-01-19 (+18d) |
| L07-A60 | L07 final finishes / snagging | 2028-01-11 → 2028-01-28 (+17d) | 2028-01-15 → 2028-02-02 (+18d) |
| 08 | **Level 08 - Finishes** | 2027-10-22 → 2027-11-09 (+18d) | 2028-01-15 → 2028-02-02 (+18d) |
| L08-A10 | L08 partitions and wall framing | 2027-10-22 → 2027-11-09 (+18d) | 2027-11-02 → 2027-11-19 (+17d) |
| L08-A20 | L08 plaster / board closing | 2027-11-05 → 2027-11-23 (+18d) | 2027-11-16 → 2027-12-03 (+17d) |
| L08-A30 | L08 screeds and wet area waterproofing | 2027-11-17 → 2027-12-04 (+17d) | 2027-11-25 → 2027-12-13 (+18d) |
| L08-A40 | L08 tiling and flooring | 2027-12-06 → 2027-12-23 (+17d) | 2027-12-18 → 2028-01-05 (+18d) |
| L08-A50 | L08 ceilings, paint and joinery | 2027-12-20 → 2028-01-06 (+17d) | 2028-01-01 → 2028-01-19 (+18d) |
| L08-A60 | L08 final finishes / snagging | 2028-01-11 → 2028-01-28 (+17d) | 2028-01-15 → 2028-02-02 (+18d) |
| 09 | **Level 09 - Finishes** | 2027-10-30 → 2027-11-17 (+18d) | 2028-01-15 → 2028-02-02 (+18d) |
| L09-A10 | L09 partitions and wall framing | 2027-10-30 → 2027-11-17 (+18d) | 2027-11-10 → 2027-11-27 (+17d) |
| L09-A20 | L09 plaster / board closing | 2027-11-13 → 2027-12-01 (+18d) | 2027-11-24 → 2027-12-11 (+17d) |
| L09-A30 | L09 screeds and wet area waterproofing | 2027-11-25 → 2027-12-13 (+18d) | 2027-12-03 → 2027-12-21 (+18d) |
| L09-A40 | L09 tiling and flooring | 2027-12-06 → 2027-12-23 (+17d) | 2027-12-18 → 2028-01-05 (+18d) |
| L09-A50 | L09 ceilings, paint and joinery | 2027-12-20 → 2028-01-06 (+17d) | 2028-01-01 → 2028-01-19 (+18d) |
| L09-A60 | L09 final finishes / snagging | 2028-01-11 → 2028-01-28 (+17d) | 2028-01-15 → 2028-02-02 (+18d) |
| 10 | **Level 10 - Finishes** | 2027-11-08 → 2027-11-25 (+17d) | 2028-02-09 → 2028-02-26 (+17d) |
| L10-A10 | L10 partitions and wall framing | 2027-11-08 → 2027-11-25 (+17d) | 2027-11-18 → 2027-12-06 (+18d) |
| L10-A20 | L10 plaster / board closing | 2027-11-22 → 2027-12-09 (+17d) | 2027-12-02 → 2027-12-20 (+18d) |
| L10-A30 | L10 screeds and wet area waterproofing | 2027-12-03 → 2027-12-21 (+18d) | 2027-12-11 → 2027-12-29 (+18d) |
| L10-A40 | L10 tiling and flooring | 2027-12-30 → 2028-01-17 (+18d) | 2028-01-12 → 2028-01-29 (+17d) |
| L10-A50 | L10 ceilings, paint and joinery | 2028-01-13 → 2028-01-31 (+18d) | 2028-01-26 → 2028-02-12 (+17d) |
| L10-A60 | L10 final finishes / snagging | 2028-02-04 → 2028-02-22 (+18d) | 2028-02-09 → 2028-02-26 (+17d) |

| ID | Task | Start | Finish |
| --- | --- | --- | --- |
| 11 | **Level 11 - Finishes** | 2027-11-16 → 2027-12-03 (+17d) | 2028-02-09 → 2028-02-26 (+17d) |
| L11-A10 | L11 partitions and wall framing | 2027-11-16 → 2027-12-03 (+17d) | 2027-11-26 → 2027-12-14 (+18d) |
| L11-A20 | L11 plaster / board closing | 2027-11-30 → 2027-12-17 (+17d) | 2027-12-10 → 2027-12-28 (+18d) |
| L11-A30 | L11 screeds and wet area waterproofing | 2027-12-11 → 2027-12-29 (+18d) | 2027-12-20 → 2028-01-06 (+17d) |
| L11-A40 | L11 tiling and flooring | 2027-12-30 → 2028-01-17 (+18d) | 2028-01-12 → 2028-01-29 (+17d) |
| L11-A50 | L11 ceilings, paint and joinery | 2028-01-13 → 2028-01-31 (+18d) | 2028-01-26 → 2028-02-12 (+17d) |
| L11-A60 | L11 final finishes / snagging | 2028-02-04 → 2028-02-22 (+18d) | 2028-02-09 → 2028-02-26 (+17d) |
| 12 | **Level 12 - Finishes** | 2027-11-24 → 2027-12-11 (+17d) | 2028-02-09 → 2028-02-26 (+17d) |
| L12-A10 | L12 partitions and wall framing | 2027-11-24 → 2027-12-11 (+17d) | 2027-12-04 → 2027-12-22 (+18d) |
| L12-A20 | L12 plaster / board closing | 2027-12-08 → 2027-12-25 (+17d) | 2027-12-18 → 2028-01-05 (+18d) |
| L12-A30 | L12 screeds and wet area waterproofing | 2027-12-20 → 2028-01-06 (+17d) | 2027-12-28 → 2028-01-14 (+17d) |
| L12-A40 | L12 tiling and flooring | 2027-12-30 → 2028-01-17 (+18d) | 2028-01-12 → 2028-01-29 (+17d) |
| L12-A50 | L12 ceilings, paint and joinery | 2028-01-13 → 2028-01-31 (+18d) | 2028-01-26 → 2028-02-12 (+17d) |
| L12-A60 | L12 final finishes / snagging | 2028-02-04 → 2028-02-22 (+18d) | 2028-02-09 → 2028-02-26 (+17d) |
| 13 | **Level 13 - Finishes** | 2027-12-02 → 2027-12-20 (+18d) | 2028-03-04 → 2028-03-22 (+18d) |
| L13-A10 | L13 partitions and wall framing | 2027-12-02 → 2027-12-20 (+18d) | 2027-12-13 → 2027-12-30 (+17d) |
| L13-A20 | L13 plaster / board closing | 2027-12-16 → 2028-01-03 (+18d) | 2027-12-27 → 2028-01-13 (+17d) |
| L13-A30 | L13 screeds and wet area waterproofing | 2027-12-28 → 2028-01-14 (+17d) | 2028-01-05 → 2028-01-22 (+17d) |
| L13-A40 | L13 tiling and flooring | 2028-01-24 → 2028-02-10 (+17d) | 2028-02-05 → 2028-02-23 (+18d) |
| L13-A50 | L13 ceilings, paint and joinery | 2028-02-07 → 2028-02-24 (+17d) | 2028-02-19 → 2028-03-08 (+18d) |
| L13-A60 | L13 final finishes / snagging | 2028-02-29 → 2028-03-17 (+17d) | 2028-03-04 → 2028-03-22 (+18d) |
| 14 | **Level 14 - Finishes** | 2027-12-10 → 2027-12-28 (+18d) | 2028-03-04 → 2028-03-22 (+18d) |
| L14-A10 | L14 partitions and wall framing | 2027-12-10 → 2027-12-28 (+18d) | 2027-12-21 → 2028-01-07 (+17d) |
| L14-A20 | L14 plaster / board closing | 2027-12-24 → 2028-01-11 (+18d) | 2028-01-04 → 2028-01-21 (+17d) |
| L14-A30 | L14 screeds and wet area waterproofing | 2028-01-05 → 2028-01-22 (+17d) | 2028-01-13 → 2028-01-31 (+18d) |
| L14-A40 | L14 tiling and flooring | 2028-01-24 → 2028-02-10 (+17d) | 2028-02-05 → 2028-02-23 (+18d) |
| L14-A50 | L14 ceilings, paint and joinery | 2028-02-07 → 2028-02-24 (+17d) | 2028-02-19 → 2028-03-08 (+18d) |
| L14-A60 | L14 final finishes / snagging | 2028-02-29 → 2028-03-17 (+17d) | 2028-03-04 → 2028-03-22 (+18d) |
| 15 | **Level 15 - Finishes** | 2027-12-18 → 2028-01-05 (+18d) | 2028-03-04 → 2028-03-22 (+18d) |
| L15-A10 | L15 partitions and wall framing | 2027-12-18 → 2028-01-05 (+18d) | 2027-12-29 → 2028-01-15 (+17d) |
| L15-A20 | L15 plaster / board closing | 2028-01-01 → 2028-01-19 (+18d) | 2028-01-12 → 2028-01-29 (+17d) |
| L15-A30 | L15 screeds and wet area waterproofing | 2028-01-13 → 2028-01-31 (+18d) | 2028-01-21 → 2028-02-08 (+18d) |
| L15-A40 | L15 tiling and flooring | 2028-01-24 → 2028-02-10 (+17d) | 2028-02-05 → 2028-02-23 (+18d) |
| L15-A50 | L15 ceilings, paint and joinery | 2028-02-07 → 2028-02-24 (+17d) | 2028-02-19 → 2028-03-08 (+18d) |
| L15-A60 | L15 final finishes / snagging | 2028-02-29 → 2028-03-17 (+17d) | 2028-03-04 → 2028-03-22 (+18d) |
| 02 | **Common Areas** | 2027-08-31 → 2027-09-17 (+17d) | 2028-02-05 → 2028-02-23 (+18d) |
| COM-010 | Lobby and common corridor finishes | 2027-08-31 → 2027-09-17 (+17d) | 2027-09-28 → 2027-10-15 (+17d) |
| COM-020 | Staircase finishes and handrails | 2028-01-03 → 2028-01-20 (+17d) | 2028-02-05 → 2028-02-23 (+18d) |
| 08 | **Vertical Transportation & External Works** | 2027-08-24 → 2027-09-10 (+17d) | 2028-03-08 → 2028-03-25 (+17d) |
| EXT-010 | External drainage and utility tie-ins | 2027-08-24 → 2027-09-10 (+17d) | 2027-09-15 → 2027-10-02 (+17d) |
| LFT-010 | Lift shaft survey and guide rail installation | 2028-01-03 → 2028-01-20 (+17d) | 2028-01-25 → 2028-02-11 (+17d) |
| EXT-020 | External paving, access and landscaping | 2028-01-24 → 2028-02-10 (+17d) | 2028-02-15 → 2028-03-03 (+17d) |
| LFT-020 | Lift equipment installation | 2028-01-26 → 2028-02-12 (+17d) | 2028-02-23 → 2028-03-11 (+17d) |
| LFT-030 | Lift testing and authority inspection | 2028-02-24 → 2028-03-13 (+18d) | 2028-03-08 → 2028-03-25 (+17d) |
| 09 | **Testing, Commissioning & Handover** | 2028-01-24 → 2028-02-10 (+17d) | 2028-05-13 → 2028-05-31 (+18d) |
| TST-010 | MEP precommissioning and flushing | 2028-01-24 → 2028-02-10 (+17d) | 2028-02-09 → 2028-02-26 (+17d) |
| TST-020 | Integrated MEP functional testing | 2028-03-06 → 2028-03-23 (+17d) | 2028-03-28 → 2028-04-14 (+17d) |
| TST-030 | Fire / life safety integrated test and inspection | 2028-03-29 → 2028-04-15 (+17d) | 2028-04-08 → 2028-04-26 (+18d) |
| TST-040 | Authority inspections and occupancy approvals | 2028-04-10 → 2028-04-27 (+17d) | 2028-04-26 → 2028-05-13 (+17d) |
| TST-050 | Final snag closeout, O&M manuals and training | 2028-04-27 → 2028-05-15 (+18d) | 2028-05-13 → 2028-05-31 (+18d) |
